# Lilly Mondrian L2 Schedule (CSRA)

Schedule from Primavera P6, 2025-10-06 to 2030-05-16, data date 2025-10-05.

## Calendars

- Netherlands: Mon-Fri 08:00-16:00; Sat-Sun off. Exceptions (off unless hours are given): 2025-12-24 to 2026-01-02, 2026-04-06, 2026-04-27, 2026-05-05, 2026-05-14, 2026-05-25, 2026-12-24 to 2027-01-01, 2027-03-26, 2027-04-27, 2027-05-05 to 2027-05-06, 2027-05-17, 2027-12-24 to 2028-01-01, 2028-04-14, 2028-04-27, 2028-05-05, 2028-05-25, 2028-06-05, 2028-12-24 to 2029-01-01, 2029-03-30, 2029-04-27, 2029-05-05, 2029-05-10, 2029-05-21, 2029-12-24 to 2030-01-01, 2030-04-19, 2030-04-27, 2030-05-05.
- Ireland-1: Mon-Fri 08:00-16:00; Sat-Sun off. Exceptions (off unless hours are given): 2025-10-27, 2025-12-24 to 2026-01-02, 2026-02-02, 2026-03-17, 2026-04-06, 2026-05-04, 2026-06-01, 2026-08-03, 2026-10-26, 2026-12-24 to 2027-01-01, 2027-02-01, 2027-03-17, 2027-03-29, 2027-05-03, 2027-06-07, 2027-08-02, 2027-10-25, 2027-12-24 to 2028-01-01, 2028-02-07, 2028-03-17, 2028-04-17, 2028-05-01, 2028-06-05, 2028-08-07, 2028-10-23, 2028-12-24 to 2029-01-01, 2029-02-05, 2029-03-17, 2029-04-02, 2029-05-07, 2029-06-04, 2029-08-06, 2029-10-22, 2029-12-24 to 2030-01-01, 2030-02-04, 2030-03-17, 2030-05-06.
- Standard: Mon-Fri 08:00-16:00; Sat-Sun off.

## Schedule

| ID | WBS | Activity | Type | Duration | Start | Finish | Predecessors | Total float | Free float | Likely | Alt Finish |
| --- | --- | --- | --- | --- | --- | --- | --- | --- | --- | --- | --- |
|  | 1 | **Project Mondrian - L2 Schedule for Concept CSRA** |  |  | 2025-10-06 | 2030-05-16 |  |  |  |  |  |
|  | 01 | **Milestones** |  |  | 2025-10-06 | 2030-05-16 |  |  |  |  |  |
|  | 1 | **Design** |  |  | 2025-10-06 | 2030-05-16 |  |  |  |  |  |
| M1010 |  | Concept Design Start | milestone | 0d | 2025-10-06 | 2025-10-06 | M1000 | 7d | 0d | 0 |  |
| M1220 |  | Concept Design Complete | milestone | 0d | 2026-01-30 | 2026-01-30 | CD1200 | 8d | 0d | 0 |  |
| M1770 |  | Basic Design Complete | milestone | 0d | 2026-07-31 | 2026-07-31 | BD1760 | 57d | 1d | 0 |  |
| M2590 |  | Detailed Design Complete | milestone | 0d | 2027-12-09 | 2027-12-09 | CP2020, SD2130, OS2140, LA2580 | 541d | 411d | 0 |  |
| M4170 |  | Project Complete (Latest PV Start) | milestone | 0d | 2030-05-16 | 2030-05-16 | M4160, M4130, M4186, M4196, SD4417, OS4200 | 0d |  | 0 |  |
|  | 2 | **Central Utilities Plant** |  |  | 2026-09-30 | 2028-09-18 |  |  |  |  |  |
| M1890 |  | Construction Start (Piling) | milestone | 0d | 2026-09-30 | 2026-09-30 | FD1880, PM1850 | 41d | 0d | 0 |  |
| M4172 |  | CUP Power On | milestone | 0d | 2028-03-20 | 2028-03-20 | CP2670 | 0d |  | 0 | 2027-12-14 |
| M2980 |  | CUP Dirty Utilities Available | milestone | 0d | 2028-07-03 | 2028-07-03 | CP2970 | 25d | 0d | 0 |  |
| M3210 |  | CUP Clean Utilities Available | milestone | 0d | 2028-09-18 | 2028-09-18 | CP3170 | 0d |  | 0 |  |
|  | 3 | **Spray Dryer Dispersal Building** |  |  | 2027-08-17 | 2030-05-16 |  |  |  |  |  |
| M2480 |  | SDD Delivery to Site | milestone | 0d | 2027-08-17 | 2027-08-17 | EP2450 | 252d | 175d | 0 |  |
| M4174 |  | SDD Power On | milestone | 0d | 2028-04-20 | 2028-04-20 | SD3040, SD2950 | 83d | 30d | 0 |  |
| M3810 |  | SDD Mechanical Completion | milestone | 0d | 2029-01-25 | 2029-01-25 | SD3710, SD3790 | 263d | 133d | 0 |  |
| M3950 |  | SDD Go Clean | milestone | 0d | 2029-04-06 | 2029-04-06 | SD3940 | 152d | 134d | 0 | 2029-04-04 |
| M4186 |  | SDD Train 1 Scope PV Start | milestone | 0d | 2030-04-22 | 2030-04-22 | SD4110 | 18d |  | 0 | 2029-12-11 |
| M4130 |  | SDD - Final Phase 1 Scope PV Start | milestone | 0d | 2030-05-16 | 2030-05-16 | SD4410 | 0d |  | 0 | 2030-04-11 |
|  | 4 | **Oral Solid Dosage Building** |  |  | 2027-07-27 | 2030-05-16 |  |  |  |  |  |
| M2400 |  | OSD Tables Press Delivery to Site | milestone | 0d | 2027-07-27 | 2027-07-27 | EP2390 | 225d | 190d | 0 |  |
| M2650 |  | OSD Tablet Coater Delivery to Site | milestone | 0d | 2027-12-08 | 2027-12-08 | EP2640 | 129d | 94d | 0 |  |
| M4176 |  | OSD Power On | milestone | 0d | 2028-04-20 | 2028-04-20 | OS2930 | 53d | 30d | 0 |  |
| M3680 |  | OSD Mechanical Completion | milestone | 0d | 2029-02-01 | 2029-02-01 | OS3670 | 144d | 0d | 0 |  |
| M3890 |  | OSD Go Clean | milestone | 0d | 2029-05-18 | 2029-05-18 | OS3870 | 121d | 106d | 0 | 2029-06-04 |
| M4196 |  | OSD Train 1 Scope PV Start | milestone | 0d | 2030-04-25 | 2030-04-25 | OS4190 | 15d |  | 0 | 2029-12-11 |
| M4160 |  | OSD Final Phase 1 Scope PV Start | milestone | 0d | 2030-05-16 | 2030-05-16 | OS4150 | 0d |  | 0 | 2030-03-15 |

Notes:
- M1010: Expenses: Concept Design Start - (cost) 0
- M1220: Expenses: Concept Design Complete - (cost) 0
- M1770: Expenses: Basic Design Complete - (cost) 0
- M2590: Expenses: Detailed Design Complete - (cost) 0
- M4170: Expenses: Project Complete - (cost) 0
- M1890: Expenses: Construction Start - (cost) 0
- M4172: Expenses: CUP Clean Utilities Available - (cost) 0
- M2980: Expenses: CUP Dirty Utilities Available - (cost) 0
- M3210: Expenses: CUP Clean Utilities Available - (cost) 0
- M2480: Expenses: SDD Delivery to Site - (cost) 0
- M4174: Expenses: SDD Mechanical Completion - (cost) 0
- M3810: Expenses: SDD Mechanical Completion - (cost) 0
- M3950: Expenses: SDD Go Clean - (cost) 0
- M4186: Expenses: SDD PV Start - (cost) 0
- M4130: Expenses: SDD PV Start - (cost) 0
- M2400: Expenses: Tables Press Delivery to Site - (cost) 0
- M2650: Expenses: Tablet Coater Delivery to Site - (cost) 0
- M4176: Expenses: OSD Mechanical Completion - (cost) 0
- M3680: Expenses: OSD Mechanical Completion - (cost) 0
- M3890: Expenses: OSD Go Clean - (cost) 0
- M4196: Expenses: OSD PV Start - (cost) 0
- M4160: Expenses: OSD PV Start - (cost) 0

| ID | WBS | Activity | Type | Duration | Start | Finish | Predecessors | Total float | Free float | Calendar | Likely | Max | Min |
| --- | --- | --- | --- | --- | --- | --- | --- | --- | --- | --- | --- | --- | --- |
|  | 5 | **Lab, Admin & ASRS** |  |  | 2028-01-18 | 2029-10-17 |  |  |  |  |  |  |  |
| M3660 |  | ASRS Ready to Commence Installation | milestone | 0d | 2028-01-18 | 2028-01-18 | AR2430, AR2420 | 14d | 0d |  | 0 |  |  |
| M4206 |  | ASRS Ready to Receive Material | milestone | 0d | 2029-10-17 | 2029-10-17 | AR3650 | 14d | 0d |  | 0 |  |  |
|  | 02 | **Concept & BoD Design** |  |  | 2025-10-06 | 2026-07-31 |  |  |  |  |  |  |  |
| CD1200 |  | Concept Design |  | 76d | 2025-10-06 | 2026-01-30 | M1000, M1010 | 7d | 0d | Ireland-1 | 76 | 76 | 76 |
| M1000 |  | Project Start | milestone | 0d | 2025-10-06 | 2025-10-06 |  | 0d |  | Ireland-1 | 0 |  |  |
| BD1290 |  | BoD/EDD Design 30% |  | 20d | 2026-02-03 | 2026-03-02 | CD1200, M1220 | 56d | 0d | Ireland-1 | 20 | 25 | 20 |
| BD1520 |  | BoD Design 60% |  | 50d | 2026-03-03 | 2026-05-14 | BD1290 | 56d | 0d | Ireland-1 | 50 | 55 | 45 |
| BD1720 |  | BoD Design 90% |  | 40d | 2026-05-15 | 2026-07-10 | BD1520 | 56d | 0d | Ireland-1 | 40 | 45 | 35 |
| BD1760 |  | BoD Complete |  | 15d | 2026-07-13 | 2026-07-31 | BD1720 | 56d | 0d | Ireland-1 | 15 | 15 | 15 |
|  | 03 | **Project Funding** |  |  | 2025-10-06 | 2026-03-23 |  |  |  |  |  |  |  |
| FD1040 |  | LLE Equipment Procurement Planning |  | 23d | 2025-10-06 | 2025-11-06 | M1000 | 0d |  | Ireland-1 | 23 | 23 | 23 |
| FD1100 |  | Contract Procurement Planning |  | 50d | 2025-10-06 | 2025-12-15 | M1000 | 44d | 0d | Ireland-1 | 50 | 50 | 50 |
| FD1370 |  | Supplementary Funding Application Approval |  | 33d | 2026-02-03 | 2026-03-20 | CD1200 | 21d | 0d | Ireland-1 | 33 | 50 | 33 |
| FD1380 |  | Release LLE Equipment PO's | milestone | 0d | 2026-03-23 | 2026-03-23 | FD1370 | 21d | 5d | Ireland-1 | 0 |  |  |
|  | 04 | **Site Acquisition** |  |  | 2025-10-06 | 2026-09-28 |  |  |  |  |  |  |  |
| FD1020 |  | Sign Letter of Intent |  | 13d | 2025-10-06 | 2025-10-22 | M1000 | 43d | 0d | Ireland-1 | 13 | 13 | 13 |
| FD1510 |  | Complete Acquisition & Transfer Ownership to Lilly |  | 124d | 2025-10-23 | 2026-04-30 | FD1020 | 43d | 0d | Ireland-1 | 124 | 124 | 124 |
| FD1880 |  | Critical Enabling works to facilitate Construction Start |  | 104d | 2026-05-01 | 2026-09-28 | FD1510 | 42d | 1d |  | 104 | 104 | 80 |
|  | 05 | **Permitting** |  |  | 2025-10-06 | 2026-09-29 |  |  |  |  |  |  |  |
| PM1210 |  | Design Deliverables Complete for Permitting |  | 75d | 2025-10-06 | 2026-01-29 | M1000 | 39d | 0d | Ireland-1 | 75 | 80 | 75 |
| PM1420 |  | REDC Compile Permit Applications |  | 45d | 2026-01-30 | 2026-04-02 | PM1210, PM1860 | 41d | 0d |  | 45 | 55 | 45 |
| PM1850 |  | Approval Period (Construction Can Commence at Risk) |  | 123d | 2026-04-03 | 2026-09-29 | PM1420 | 41d | 0d |  | 123 | 150 | 122 |
|  | 06 | **Other External Interfaces** |  |  | 2025-12-16 | 2027-08-27 |  |  |  |  |  |  |  |
|  | 1 | **Canal Relocation** |  |  | 2025-12-16 | 2027-07-12 |  |  |  |  |  |  |  |
| EN1010 |  | Interfaces - Canal Diversion Planning |  | 65d | 2025-12-16 | 2026-03-16 | FD1100 | 195d | 0d | Standard | 65 | 70 | 65 |
| EN1020 |  | Interfaces - Canal Diversion Permitting |  | 175d | 2026-03-17 | 2026-11-16 | EN1010 | 195d | 0d | Standard | 175 | 185 | 150 |
| EN1030 |  | Interfaces - Canal Diversion Execution 50% Complete |  | 85d | 2026-11-17 | 2027-03-15 | EN1020 | 195d | 0d | Standard | 85 | 95 | 70 |
| EN1070 |  | Interfaces - Canal Diversion Execution 100% Complete |  | 85d | 2027-03-16 | 2027-07-12 | EN1020, EN1030 | 195d | 0d | Standard | 85 | 95 | 70 |

Notes:
- M3660: Expenses: ASRS Commissioning Complete - (cost) 0
- M4206: Expenses: ASRS Commissioning Complete - (cost) 0
- M1000: Expenses: Project Start - (cost) 0
- FD1100: Expenses: Contracting Strategy Workshop - (cost) 0
- FD1380: Expenses: Release LLE Equipment PO's - (cost) 0

| ID | WBS | Activity | Duration | Start | Finish | Predecessors | Total float | Free float | Calendar | Likely | Max | Min | Activity Type |
| --- | --- | --- | --- | --- | --- | --- | --- | --- | --- | --- | --- | --- | --- |
|  | 2 | **Utilities** |  | 2025-12-16 | 2027-08-27 |  |  |  |  |  |  |  |  |
| EN1040 |  | Interfaces - Water pipe relocation (Estimated duration for entire process) | 314d | 2025-12-16 | 2027-02-26 | FD1100 | 247d | 0d | Standard | 314 | 380 | 300 |  |
| EN1050 |  | Interfaces - New AGI Installation (Estimated duration for entire process) | 410d | 2026-02-02 | 2027-08-27 | M1220 | 8d |  | Standard | 410 | 510 | 400 |  |
|  | 07 | **Contract Procurement** |  | 2025-10-06 | 2027-03-26 |  |  |  |  |  |  |  |  |
|  | 1 | **Piling** |  | 2026-01-30 | 2026-09-29 |  |  |  |  |  |  |  |  |
| CT1270 |  | Piling - Prep RFQ | 15d | 2026-01-30 | 2026-02-20 | PM1210, PM1860 | 40d | 0d | Ireland-1 | 15 | 15 | 15 | Piling |
| CT1600 |  | Piling - Bid & Award | 65d | 2026-02-23 | 2026-05-27 | PM1210, CT1270, PM1860 | 40d | 0d | Ireland-1 | 65 | 75 | 60 | Piling |
| CT1860 |  | Piling - Design, LA Approval & Mobilise | 89d | 2026-05-28 | 2026-09-29 | CT1600 | 41d | 0d |  | 89 | 100 | 80 | Piling |
|  | 2 | **Dewatering** |  | 2025-12-16 | 2026-09-28 |  |  |  |  |  |  |  |  |
| CT1150 |  | Dewatering - Prep RFQ | 10d | 2025-12-16 | 2026-01-08 | FD1100, M1000 | 44d | 0d | Ireland-1 | 10 | 10 | 10 |  |
| CT1410 |  | Dewatering - Bid & Award | 60d | 2026-01-09 | 2026-04-07 | CT1150 | 44d | 0d | Ireland-1 | 60 | 70 | 60 |  |
| CT1790 |  | Dewatering - Design, Approval & Mobilisation | 90d | 2026-04-08 | 2026-08-17 | CT1410 | 42d | 0d |  | 90 | 105 | 90 |  |
| CT1870 |  | Dewatering - Install In Support of Piling | 30d | 2026-08-18 | 2026-09-28 | CT1790 | 42d | 1d |  | 30 | 40 | 30 |  |
|  | 3 | **Structural Steel & Pre-Cast Concrete** |  | 2026-01-09 | 2026-07-02 |  |  |  |  |  |  |  |  |
| CT1160 |  | Steel & PCC - Prep RFQ | 20d | 2026-01-09 | 2026-02-06 | FD1100, M1000, CT1150 | 98d | 0d | Ireland-1 | 20 | 30 | 20 |  |
| CT1500 |  | Steel & PCC - Bid & Award | 70d | 2026-02-09 | 2026-05-20 | CT1160 | 98d | 0d | Ireland-1 | 70 | 75 | 60 |  |
| CT1820 |  | Steel & PCC - Mobilisation | 30d | 2026-05-21 | 2026-07-02 | CT1500 | 99d | 42d |  | 30 | 35 | 20 |  |
|  | 4 | **Piling Mat Works** |  | 2025-10-06 | 2027-03-26 |  |  |  |  |  |  |  |  |
| PM1860 |  | Design Deliverables Complete for Piling Mat | 61d | 2025-10-06 | 2026-01-09 | M1000 | 19d | 0d | Ireland-1 | 61 | 70 | 55 |  |
| CT2030 |  | Piling Mat - Prep RFQ | 20d | 2026-01-12 | 2026-02-09 | PM1860 | 19d | 0d | Ireland-1 | 20 | 25 | 20 | Piling |
| EN1000 |  | External Access Road Infrastructure Improvements | 130d | 2026-02-02 | 2026-07-31 | CD1200 | 14d | 0d | Standard | 130 | 160 | 120 |  |
| CT2040 |  | Piling Mat - Bid & Award | 65d | 2026-02-10 | 2026-05-14 | CT2030 | 19d | 0d | Ireland-1 | 65 | 75 | 60 | Piling |
| CT2050 |  | Piling Mat - Mobilise & Procure | 50d | 2026-05-15 | 2026-07-24 | CT2040 | 19d | 5d |  | 50 | 55 | 40 | Piling |
| CT2060 |  | Piling Mat - Lay Matt for Acccess, CUP & Link | 42d | 2026-08-03 | 2026-09-29 | CT2050, EN1000 | 14d | 0d | Standard | 42 | 50 | 40 |  |
| CT2070 |  | Piling Mat - Lay Matt for SDD & OSD | 43d | 2026-09-30 | 2026-11-27 | CT2060 | 14d | 0d | Standard | 43 | 60 | 40 |  |
| CT2080 |  | Piling Mat - Lay Matt for ASRS & Lab | 45d | 2026-11-30 | 2027-01-29 | CT2070 | 14d | 0d | Standard | 45 | 55 | 30 |  |
| CT2100 |  | Piling Mat - Lay Matt for Balance of Site | 20d | 2027-02-01 | 2027-02-26 | CT2080 | 46d | 0d | Standard | 20 | 30 | 15 |  |
| CT2090 |  | Piling Mat - Lay Matt for Admin | 20d | 2027-03-01 | 2027-03-26 | CT2080, EN1040 | 247d | 1d | Standard | 20 | 25 | 15 |  |

| ID | WBS | Activity | Duration | Start | Finish | Predecessors | Total float | Free float | Calendar | Likely | Max | Min |
| --- | --- | --- | --- | --- | --- | --- | --- | --- | --- | --- | --- | --- |
|  | 08 | **Equipment Procurement** |  | 2025-11-07 | 2027-12-08 |  |  |  |  |  |  |  |
|  | 01 | **OSD - Coaters** |  | 2025-11-07 | 2027-12-08 |  |  |  |  |  |  |  |
| EP1060 |  | OSD - Coaters - Develop RFQ | 32d | 2025-11-07 | 2025-12-22 | FD1040 | 0d |  | Ireland-1 | 32 | 40 | 15 |
| EP1320 |  | OSD - Coaters - Bid & Award | 65d | 2025-12-23 | 2026-04-07 | EP1060 | 130d | 0d | Ireland-1 | 65 | 80 | 60 |
| EP1560 |  | OSD - Coaters - Vendor Design IFC | 40d | 2026-04-08 | 2026-06-08 | EP1320, FD1380 | 174d | 84d |  | 40 | 45 | 40 |
| EP2640 |  | OSD - Coaters - Lead Time | 420d | 2026-04-08 | 2027-12-08 | EP1320, FD1380 | 129d | 0d |  | 420 | 450 | 410 |
|  | 02 | **SDD - Spray Dryers** |  | 2025-11-07 | 2027-11-09 |  |  |  |  |  |  |  |
| EP1070 |  | SDD - Spray Dryers - Develop RFQ | 26d | 2025-11-07 | 2025-12-12 | FD1040 | 160d | 0d | Ireland-1 | 26 | 40 | 15 |
| EP1330 |  | SDD - Spray Dryers - Bid & Award | 65d | 2025-12-15 | 2026-03-27 | EP1070 | 160d | 0d | Ireland-1 | 65 | 80 | 60 |
| EP1650 |  | SDD - Spray Dryers - Vendor Design IFC | 60d | 2026-03-30 | 2026-06-26 | EP1330, FD1380 | 160d | 70d |  | 60 | 75 | 55 |
| EP2450 |  | SDD - Spray Dryers - Lead Time (PSD 4 Delivery) | 345d | 2026-03-30 | 2027-08-17 | EP1330, FD1380 | 179d | 0d |  | 345 | 395 | 340 |
| EP2600 |  | SDD - Spray Dryers - Lead Time (PSD 5 Delivery) | 60d | 2027-08-18 | 2027-11-09 | EP2450 | 267d | 155d |  | 60 | 100 | 50 |
|  | 05 | **SDD - Post Dryers** |  | 2025-11-07 | 2027-08-17 |  |  |  |  |  |  |  |
| EP1110 |  | SDD - Post Dryers - Develop RFQ | 26d | 2025-11-07 | 2025-12-12 | FD1040 | 123d | 0d | Ireland-1 | 26 | 40 | 15 |
| EP1430 |  | SDD - Post Dryers - Bid & Award | 65d | 2025-12-15 | 2026-03-27 | EP1110 | 179d | 0d | Ireland-1 | 65 | 80 | 60 |
| EP1590 |  | SDD - Post Dryers - Vendor Design IFC | 30d | 2026-03-30 | 2026-05-13 | EP1430, FD1380 | 190d | 100d |  | 30 | 40 | 30 |
| EP2520 |  | SDD - Post Dryers - Lead Time | 345d | 2026-03-30 | 2027-08-17 | EP1430, FD1380 | 179d | 135d |  | 345 | 375 | 335 |
|  | 03 | **SDD/OSD - Automatic Weigh & Dispense** |  | 2025-11-07 | 2027-08-17 |  |  |  |  |  |  |  |
| EP1080 |  | SDD/OSD - Automatic Weigh & Dispense - Develop RFQ | 26d | 2025-11-07 | 2025-12-12 | FD1040 | 93d | 0d | Ireland-1 | 26 | 40 | 15 |
| EP1340 |  | SDD/OSD - Automatic Weigh & Dispense - Bid & Award | 65d | 2025-12-15 | 2026-03-27 | EP1080 | 179d | 0d | Ireland-1 | 65 | 80 | 60 |
| EP1570 |  | SDD/OSD - Automatic Weigh & Dispense - Vendor Design IFC | 40d | 2026-03-30 | 2026-05-29 | EP1340, FD1380 | 180d | 90d |  | 40 | 45 | 40 |
| EP2460 |  | SDD/OSD - Automatic Weigh & Dispense - Lead Time | 345d | 2026-03-30 | 2027-08-17 | EP1340, FD1380 | 179d | 135d |  | 345 | 395 | 340 |
|  | 06 | **OSD - Tablet Presses** |  | 2025-11-07 | 2027-07-27 |  |  |  |  |  |  |  |
| EP1120 |  | OSD - Tablet Presses - Develop RFQ | 31d | 2025-11-07 | 2025-12-19 | FD1040 | 110d | 0d | Ireland-1 | 31 | 40 | 15 |
| EP1440 |  | OSD - Tablet Presses - Bid & Award | 65d | 2025-12-22 | 2026-04-03 | EP1120 | 175d | 0d | Ireland-1 | 65 | 80 | 60 |
| EP1610 |  | OSD - Tablet Presses - Vendor Design IFC | 40d | 2026-04-07 | 2026-06-05 | EP1440, FD1380 | 175d | 85d |  | 40 | 45 | 40 |
| EP2390 |  | OSD - Tablet Presses - Lead Time | 325d | 2026-04-07 | 2027-07-27 | EP1440, FD1380 | 225d | 0d |  | 325 | 355 | 315 |

| ID | WBS | Activity | Duration | Start | Finish | Predecessors | Total float | Free float | Calendar | Likely | Max | Min |
| --- | --- | --- | --- | --- | --- | --- | --- | --- | --- | --- | --- | --- |
|  | 07 | **OSD - Blenders** |  | 2026-02-03 | 2027-08-16 |  |  |  |  |  |  |  |
| EP1130 |  | OSD - Blenders - Develop RFQ | 15d | 2026-02-03 | 2026-02-23 | EP1080, M1220 | 66d | 0d | Ireland-1 | 15 | 25 | 15 |
| EP1450 |  | OSD - Blenders - Bid & Award | 65d | 2026-02-24 | 2026-05-28 | EP1130 | 138d | 0d | Ireland-1 | 65 | 80 | 60 |
| EP1620 |  | OSD - Blenders - Vendor Design IFC | 40d | 2026-05-29 | 2026-07-23 | EP1450, FD1380 | 141d | 51d |  | 40 | 45 | 40 |
| EP2310 |  | OSD - Blenders - Lead Time | 305d | 2026-05-29 | 2027-08-16 | EP1450, FD1380 | 180d | 166d |  | 305 | 335 | 295 |
|  | 04 | **OSD - Granulators** |  | 2026-02-03 | 2027-10-27 |  |  |  |  |  |  |  |
| EP1090 |  | OSD - Granulators - Develop RFQ | 26d | 2026-02-03 | 2026-03-10 | CD1200 | 127d | 0d | Ireland-1 | 26 | 26 | 15 |
| EP1350 |  | OSD - Granulators - Bid & Award | 65d | 2026-03-11 | 2026-06-15 | EP1090 | 127d | 0d | Ireland-1 | 65 | 80 | 60 |
| EP1580 |  | OSD - Granulators - Vendor Design IFC | 40d | 2026-06-16 | 2026-08-10 | EP1350, FD1380 | 129d | 39d |  | 40 | 45 | 40 |
| EP2470 |  | OSD - Granulators - Lead Time | 345d | 2026-06-16 | 2027-10-27 | EP1350, FD1380 | 159d | 124d |  | 345 | 395 | 340 |
|  | 08 | **ESUB - Generator Package** |  | 2025-12-23 | 2027-09-08 |  |  |  |  |  |  |  |
| EP2650 |  | EGen - Generator Pkg - Develop RFQ | 15d | 2025-12-23 | 2026-01-22 | EP1060 | 0d |  | Ireland-1 | 15 | 25 | 15 |
| EP2660 |  | EGen - Generator Pkg - Bid & Award | 60d | 2026-01-23 | 2026-04-21 | EP2650 | 0d |  | Ireland-1 | 60 | 80 | 60 |
| EP2680 |  | EGen - Generator Pkg - Lead Time | 345d | 2026-04-22 | 2027-09-08 | EP2660, FD1380 | 0d |  |  | 345 | 360 | 250 |
|  | 09 | **MDC - Modular Data Centres** |  | 2026-02-03 | 2027-06-14 |  |  |  |  |  |  |  |
| EP1170 |  | MDC - Modular Data Centres - Develop RFQ | 15d | 2026-02-03 | 2026-02-23 | EP1110, M1220 | 96d | 0d | Ireland-1 | 15 | 25 | 15 |
| EP1470 |  | MDC - Modular Data Centres - Bid & Award | 65d | 2026-02-24 | 2026-05-28 | EP1170 | 151d | 0d | Ireland-1 | 65 | 80 | 60 |
| EP2210 |  | MDC - Modular Data Centres - Lead Time | 260d | 2026-05-29 | 2027-06-14 | EP1470, FD1380 | 154d | 88d |  | 260 | 290 | 250 |
|  | 10 | **CUP - Plant Steam Generation** |  | 2026-02-03 | 2027-06-14 |  |  |  |  |  |  |  |
| EP1180 |  | CUP - Plant Steam Generation - Develop RFQ | 15d | 2026-02-03 | 2026-02-23 | EP1120, M1220 | 88d | 0d | Ireland-1 | 15 | 25 | 15 |
| EP1480 |  | CUP - Plant Steam Generation - Bid & Award | 65d | 2026-02-24 | 2026-05-28 | EP1180 | 116d | 0d | Ireland-1 | 65 | 80 | 60 |
| EP1700 |  | CUP - Plant Steam Generation - Vendor Design IFC | 50d | 2026-05-29 | 2026-08-06 | EP1480, FD1380 | 131d | 31d |  | 50 | 65 | 45 |
| EP2220 |  | CUP - Plant Steam Generation - Lead Time | 260d | 2026-05-29 | 2027-06-14 | EP1480, FD1380 | 119d | 70d |  | 260 | 290 | 250 |
|  | 11 | **Common - Unit Substations** |  | 2026-02-24 | 2027-07-06 |  |  |  |  |  |  |  |
| EP1190 |  | Common - MV Board & Unit Substations - Develop RFQ | 15d | 2026-02-24 | 2026-03-16 | EP1130 | 66d | 0d | Ireland-1 | 15 | 25 | 15 |
| EP1490 |  | Common - MV Board & Unit Substations - Bid & Award | 65d | 2026-03-18 | 2026-06-19 | EP1190 | 75d | 0d | Ireland-1 | 65 | 80 | 60 |
| EP1710 |  | Common - MV Board & Unit Substations - Vendor Design IFC | 50d | 2026-06-22 | 2026-08-28 | EP1490, FD1380 | 115d | 15d |  | 50 | 65 | 45 |
| EP2230 |  | Common - MV Board & Unit Substations - Lead Time | 260d | 2026-06-22 | 2027-07-06 | EP1490, FD1380 | 76d | 0d |  | 260 | 290 | 250 |

| ID | WBS | Activity | Duration | Start | Finish | Predecessors | Total float | Free float | Calendar | Likely | Max | Min |
| --- | --- | --- | --- | --- | --- | --- | --- | --- | --- | --- | --- | --- |
|  | 12 | **CUP - Hybrid Cooling Towers** |  | 2026-02-24 | 2027-01-12 |  |  |  |  |  |  |  |
| EP1240 |  | CUP - Hybrid Cooling Towers - Develop RFQ | 15d | 2026-02-24 | 2026-03-16 | EP1170 | 96d | 0d | Ireland-1 | 15 | 25 | 15 |
| EP1530 |  | CUP - Hybrid Cooling Towers - Bid & Award | 65d | 2026-03-18 | 2026-06-19 | EP1240 | 113d | 0d | Ireland-1 | 65 | 80 | 60 |
| EP1730 |  | CUP - Hybrid Cooling Towers - Vendor Design IFC | 50d | 2026-06-22 | 2026-08-28 | EP1530, FD1380 | 115d | 15d |  | 50 | 65 | 45 |
| EP1970 |  | CUP - Hybrid Cooling Towers - Lead Time | 140d | 2026-06-22 | 2027-01-12 | EP1530, FD1380 | 223d | 174d |  | 140 | 170 | 130 |
|  | 13 | **CUP - Water Cooled Chillers** |  | 2026-02-24 | 2027-01-12 |  |  |  |  |  |  |  |
| EP1250 |  | CUP - Water Cooled Chillers - Develop RFQ | 15d | 2026-02-24 | 2026-03-16 | EP1180 | 88d | 0d | Ireland-1 | 15 | 25 | 15 |
| EP1540 |  | CUP - Water Cooled Chillers - Bid & Award | 65d | 2026-03-18 | 2026-06-19 | EP1250 | 113d | 0d | Ireland-1 | 65 | 80 | 60 |
| EP1740 |  | CUP - Water Cooled Chillers - Vendor Design IFC | 50d | 2026-06-22 | 2026-08-28 | EP1540, FD1380 | 115d | 15d |  | 50 | 65 | 45 |
| EP1980 |  | CUP - Water Cooled Chillers - Lead Time | 140d | 2026-06-22 | 2027-01-12 | EP1540, FD1380 | 223d | 174d |  | 140 | 170 | 130 |
|  | 14 | **CUP - PUW Generation Skid** |  | 2026-02-24 | 2027-05-10 |  |  |  |  |  |  |  |
| EP1030 |  | CUP - PUW Generation Skid - Develop RFQ | 15d | 2026-02-24 | 2026-03-16 | EP1180 | 88d | 0d | Ireland-1 | 15 | 25 | 15 |
| EP1230 |  | CUP - PUW Generation Skid - Bid & Award | 65d | 2026-03-18 | 2026-06-19 | EP1030 | 113d | 0d | Ireland-1 | 65 | 80 | 60 |
| EP1630 |  | CUP - PUW Generation Skid - Vendor Design IFC | 50d | 2026-06-22 | 2026-08-28 | EP1230, FD1380 | 115d | 15d |  | 50 | 65 | 45 |
| EP2050 |  | CUP - PUW Generation Skid - Lead Time | 220d | 2026-06-22 | 2027-05-10 | EP1230, FD1380 | 143d | 94d |  | 220 | 250 | 210 |
|  | 15 | **CUP/Tank Farm - SS Tanks (50/70 m3)** |  | 2026-03-18 | 2027-11-16 |  |  |  |  |  |  |  |
| EP1260 |  | CUP/Tank Farm - SS Tanks (50/70 m3) - Develop RFQ | 15d | 2026-03-18 | 2026-04-08 | EP1190 | 66d | 0d | Ireland-1 | 15 | 25 | 15 |
| EP1550 |  | CUP/Tank Farm - SS Tanks (50/70 m3) - Bid & Award | 65d | 2026-04-09 | 2026-07-10 | EP1260 | 66d | 0d | Ireland-1 | 65 | 80 | 60 |
| EP1750 |  | CUP/Tank Farm - SS Tanks (50/70 m3) - Vendor Design IFC | 50d | 2026-07-13 | 2026-09-18 | EP1550, FD1380 | 100d | 0d |  | 50 | 65 | 45 |
| EP2260 |  | CUP/Tank Farm - SS Tanks (50/70 m3) - Lead Time | 260d | 2026-07-13 | 2027-07-27 | EP1550, FD1380 | 67d | 0d |  | 260 | 290 | 250 |
| EP2410 |  | SDD/STF - SS Tanks - Lead Time | 40d | 2027-07-28 | 2027-09-21 | EP2260 | 67d | 0d |  | 40 | 60 | 35 |
| EP2550 |  | OSD - SS Tanks - Lead Time | 40d | 2027-09-22 | 2027-11-16 | EP2410 | 145d | 110d |  | 40 | 60 | 35 |
|  | 16 | **SDD/OSD - CIP Skids** |  | 2026-03-18 | 2027-07-13 |  |  |  |  |  |  |  |
| EP1310 |  | SDD/OSD - CIP Skids - Develop RFQ | 15d | 2026-03-18 | 2026-04-08 | EP1240 | 96d | 0d | Ireland-1 | 15 | 25 | 15 |
| EP1640 |  | SDD/OSD - CIP Skids - Bid & Award | 65d | 2026-04-09 | 2026-07-10 | EP1310 | 96d | 0d | Ireland-1 | 65 | 80 | 60 |
| EP1800 |  | SDD/OSD - CIP Skids - Vendor Design IFC | 50d | 2026-07-13 | 2026-09-18 | EP1640, FD1380 | 100d | 10d |  | 50 | 65 | 45 |
| EP2290 |  | SDD/OSD - CIP Skids - Lead Time | 250d | 2026-07-13 | 2027-07-13 | EP1640, FD1380 | 98d | 49d |  | 250 | 280 | 240 |

| ID | WBS | Activity | Type | Duration | Start | Finish | Predecessors | Total float | Free float | Calendar | Likely | Max | Min |
| --- | --- | --- | --- | --- | --- | --- | --- | --- | --- | --- | --- | --- | --- |
|  | 17 | **SDD/OSD - Parts Washers** |  |  | 2026-03-18 | 2027-06-22 |  |  |  |  |  |  |  |
| EP1390 |  | SDD/OSD - Parts Washer - Develop RFQ |  | 25d | 2026-03-18 | 2026-04-22 | EP1250 | 88d | 0d | Ireland-1 | 25 | 30 | 15 |
| EP1670 |  | SDD/OSD - Parts Washer - Bid & Award |  | 65d | 2026-04-23 | 2026-07-24 | EP1390 | 88d | 0d | Ireland-1 | 65 | 80 | 60 |
| EP1810 |  | SDD/OSD - Parts Washer - Vendor Design IFC |  | 50d | 2026-07-27 | 2026-10-02 | EP1670, FD1380 | 90d | 0d |  | 50 | 65 | 45 |
| EP2240 |  | SDD/OSD - Parts Washer - Lead Time |  | 225d | 2026-07-27 | 2027-06-22 | EP1670, FD1380 | 223d | 145d |  | 225 | 255 | 215 |
|  | 18 | **CIP Valve Arrays** |  |  | 2026-03-18 | 2027-10-19 |  |  |  |  |  |  |  |
| EP1050 |  | SDD/OSD CIP Arrays- Develop RFQ |  | 15d | 2026-03-18 | 2026-04-08 | EP1030 | 88d | 0d | Ireland-1 | 15 | 25 | 15 |
| EP1280 |  | SDD/OSD CIP Arrays- Bid & Award |  | 65d | 2026-04-09 | 2026-07-10 | EP1050 | 88d | 0d | Ireland-1 | 65 | 80 | 60 |
| EP1660 |  | SDD/OSD CIP Arrays- Vendor Design IFC |  | 60d | 2026-07-13 | 2026-10-02 | EP1280, FD1380 | 90d | 0d |  | 60 | 75 | 55 |
| EP2280 |  | SDD/OSD CIP Arrays- Lead Time - SDD |  | 300d | 2026-07-13 | 2027-09-21 | EP1280, FD1380 | 138d | 0d |  | 300 | 330 | 290 |
| EP2500 |  | SDD/OSD CIP Arrays- Lead Time - OSD |  | 20d | 2027-09-22 | 2027-10-19 | EP1280, FD1380, EP2280 | 138d | 60d |  | 20 | 50 | 20 |
|  | 16 | **L15 MV Substation & Generator Compound** |  |  | 2026-09-30 | 2028-03-06 |  |  |  |  |  |  |  |
| MV1000 |  | MV Compound - Construct Compound Grid & MV Sub Building |  | 170d | 2026-09-30 | 2027-06-11 | CT2060 | 92d | 17d | Ireland-1 | 170 | 180 | 150 |
| MV1010 |  | MV Compound - Install & Terminate Grid & MV Boards |  | 50d | 2027-07-07 | 2027-09-15 | MV1000, EP2230 | 75d |  | Ireland-1 | 50 | 60 | 45 |
| MV1020 |  | MV Compound - Install, Hook Up & Commission Gas Generators |  | 80d | 2027-09-09 | 2028-01-07 | EP2680, EN1050 | 0d |  | Ireland-1 | 80 | 80 | 70 |
| MV1030 |  | MV Compound - MC & Feed Forward to Site Unit Subs |  | 40d | 2028-01-10 | 2028-03-06 | MV1020, MV1010, EN1050 | 0d |  | Ireland-1 | 40 | 45 | 30 |
|  | 17 | **L17 Solvent Tank Farm** |  |  | 2027-03-01 | 2028-04-07 |  |  |  |  |  |  |  |
| SV1000 |  | STF - Piling |  | 20d | 2027-03-01 | 2027-03-26 | CT2100 | 166d | 0d | Standard | 20 | 25 | 15 |
| SV1010 |  | STF - Foundations & CS Works |  | 130d | 2027-03-29 | 2027-09-24 | SV1000 | 166d | 0d | Standard | 130 | 145 | 120 |
| SV1020 |  | STF - Install Platforms, Tanks & Pipe Rack (To Start of C&Q) |  | 110d | 2027-09-27 | 2028-02-25 | SV1010 | 166d | 0d | Standard | 110 | 130 | 100 |
| SV1030 |  | STF - C&Q |  | 30d | 2028-02-28 | 2028-04-07 | SV1020 | 166d | 0d | Standard | 30 | 40 | 20 |
| SV1040 |  | STF - Ready to Feed Forward for C&Q of Target Vessel | milestone | 0d | 2028-04-07 | 2028-04-07 | SV1030 | 166d |  | Standard | 0 |  |  |
|  | 18 | **L16 & 21 Waste Water Treatment** |  |  | 2027-03-01 | 2028-08-11 |  |  |  |  |  |  |  |
| WW1050 |  | Waste Water - Piling |  | 40d | 2027-03-01 | 2027-04-23 | CT2100 | 46d | 0d | Standard | 40 | 50 | 30 |
| WW1060 |  | Waste Water - Foundations & CS Works |  | 130d | 2027-04-26 | 2027-10-22 | WW1050 | 46d | 0d | Standard | 130 | 145 | 120 |
| WW1070 |  | Waste Water - Install & Hook Up Equipment |  | 110d | 2027-10-25 | 2028-03-24 | WW1060, EP2410 | 46d | 0d | Standard | 110 | 130 | 100 |
| WW1080 |  | Waste Water - Startup & Commissioning |  | 100d | 2028-03-27 | 2028-08-11 | WW1070, MV1030 | 46d | 0d | Standard | 100 | 120 | 90 |
| WW1090 |  | Waste Water - Ready to Support Commissioning | milestone | 0d | 2028-08-11 | 2028-08-11 | WW1080 | 46d |  | Standard | 0 |  |  |

| ID | WBS | Activity | Duration | Start | Finish | Predecessors | Total float | Free float | Calendar | Likely | Max | Min | Activity Type |
| --- | --- | --- | --- | --- | --- | --- | --- | --- | --- | --- | --- | --- | --- |
|  | 09 | **L11 & L12 CUP & Link** |  | 2026-08-04 | 2028-10-16 |  |  |  |  |  |  |  |  |
|  | 1 | **CUP & Link Design** |  | 2026-08-04 | 2027-01-06 |  |  |  |  |  |  |  |  |
| CP1840 |  | CUP & Link - Design CSA for Shell & Core | 20d | 2026-08-04 | 2026-08-31 | BD1760, M1770 | 56d | 0d | Ireland-1 | 20 | 40 | 20 | S&C |
| CP2020 |  | CUP & Link - Design Fitout IFC's | 70d | 2026-09-21 | 2027-01-06 | CP1840, EP1700, EP1710, EP1730, EP1740, EP1630, EP1750 | 98d | 0d | Ireland-1 | 70 | 80 | 70 |  |
|  | 2 | **CUP & Link Procurement** |  | 2026-09-01 | 2027-04-15 |  |  |  |  |  |  |  |  |
| CP2010 |  | CUP - Structural Components Lead time (From IFC) | 70d | 2026-09-01 | 2026-12-07 | CP1840, CT1820 | 57d | 16d |  | 70 | 75 | 65 |  |
| CP2200 |  | Offsite Piping Fabrication (Sufficient for Bulk Installation) | 70d | 2027-01-07 | 2027-04-15 | CP2020 | 97d | 56d |  | 70 | 75 | 50 |  |
|  | 3 | **CUP & Link Construction** |  | 2026-09-30 | 2028-04-04 |  |  |  |  |  |  |  |  |
|  | 1 | **Utilities Generation & Distribution** |  | 2026-09-30 | 2028-04-04 |  |  |  |  |  |  |  |  |
| CP2000 |  | CUP & Link - Piling & Foundations (to Start of Steel) | 65d | 2026-09-30 | 2027-01-07 | CT1860, CT1870, FD1880, PM1850, M1890, CT2060 | 41d | 0d |  | 65 | 75 | 55 | Piling |
| CP2190 |  | CUP & Link - Shell & Core (to Start of Fit out) | 125d | 2027-01-08 | 2027-07-08 | CP2000, CP2010 | 41d | 0d |  | 125 | 140 | 80 | S&C |
| CP2380 |  | CUP - Install Central Rack | 32d | 2027-07-09 | 2027-08-23 | CP2190, CP2200 | 49d | 0d |  | 32 | 50 | 32 | FT |
| CP2950 |  | Link - Install Rack Piping | 110d | 2027-07-09 | 2027-12-09 | CP2190 | 132d | 0d | Standard | 110 | 120 | 100 |  |
| CP2930 |  | Link - Extend Link to Lab & Admin & Install Piping (Post Canal Diversion) | 145d | 2027-07-13 | 2028-01-31 | EN1070 | 195d | 130d | Standard | 145 | 150 | 115 |  |
| CP2510 |  | CUP & Link - HL Fit Out to Start of Equip Installation | 20d | 2027-08-24 | 2027-09-20 | CP2190, CP2200, CP2380 | 49d | 0d |  | 20 | 40 | 20 | FT |
| CP2700 |  | CUP & Link - Equipment Installation & Hook-up | 45d | 2027-09-21 | 2027-11-22 | CP2510, CP2380, EP2220, EP1970, EP1980, EP2050, EP2260, EP2290 | 49d | 0d |  | 45 | 60 | 45 |  |
| CP2780 |  | CUP - Grey Utility Test, Walkdown, Puchout & MC | 40d | 2027-11-23 | 2028-01-25 | CP2700 | 49d | 0d |  | 40 | 50 | 35 |  |
| CP3250 |  | Link - Piping Test, Walkdown, Puchout & MC | 40d | 2027-12-10 | 2028-02-11 | CP2950 | 121d | 96d |  | 40 | 50 | 35 |  |
| CP2920 |  | CUP - Clean Utility Test, Walkdown, Puchout & MC | 50d | 2028-01-26 | 2028-04-04 | CP2700, CP2780 | 59d |  |  | 50 | 60 | 40 |  |
|  | 2 | **Eectrical Rooms** |  | 2027-07-09 | 2028-03-20 |  |  |  |  |  |  |  |  |
| CP2440 |  | CUP - Elec Rooms Construction & HL Fit Out | 40d | 2027-07-09 | 2027-09-02 | CP2190, CP2020, CP2200 | 41d | 0d |  | 40 | 50 | 32 | FT |
| CP2560 |  | CUP - Install Test & Terminate Unit Substations | 50d | 2027-09-03 | 2027-11-11 | CP2440, EP2230 | 41d | 0d |  | 50 | 55 | 45 |  |
| CP2660 |  | CUP - Unit Sub & MCC MC | 35d | 2027-11-12 | 2028-01-07 | CP2560 | 41d |  |  | 35 | 45 | 35 |  |
| CP2670 |  | CUP - Commission & Power On Unit Substation | 10d | 2028-03-07 | 2028-03-20 | CP2660, MV1030 | 0d |  |  | 10 | 20 | 10 |  |

Notes:
- CP2670: Expenses: CUP - Powe On Unit Sub - (cost) 0

| ID | WBS | Activity | Duration | Start | Finish | Predecessors | Total float | Free float | Calendar | Likely | Max | Min | Activity Type | Shire Wild Card |
| --- | --- | --- | --- | --- | --- | --- | --- | --- | --- | --- | --- | --- | --- | --- |
|  | 4 | **CUP & Link - C&Q** |  | 2028-03-21 | 2028-10-16 |  |  |  |  |  |  |  |  |  |
| CP2710 |  | CUP - Commission & Start Up LV Distribution & UPS | 10d | 2028-03-21 | 2028-04-03 | CP2440, CP2660, CP2670, M4172 | 0d |  |  | 10 | 20 | 10 |  |  |
| CP2790 |  | CUP - Startup IDF's & Make Ready for Loop Checking | 35d | 2028-04-04 | 2028-05-26 | CP2710 | 5d |  |  | 35 | 40 | 30 |  |  |
| CP2940 |  | CUP - Start Up/SAT GU Generation | 40d | 2028-04-04 | 2028-06-02 | CP2780, CP2710 | 0d |  |  | 40 | 45 | 30 |  |  |
| CP2970 |  | CUP - Start Up GU Distribution | 20d | 2028-06-06 | 2028-07-03 | CP2940, CP2790 | 0d |  |  | 20 | 40 | 20 |  |  |
| CP3070 |  | Link - Start Up GU Distribution | 20d | 2028-07-04 | 2028-07-31 | CP2970, M2980, CP2950, CP3250 | 25d | 0d |  | 20 | 40 | 20 |  |  |
| CP3130 |  | CUP - Start Up/SAT CU Generation | 35d | 2028-07-04 | 2028-08-21 | CP2970, CP2920, MD2830, CP2790 | 0d |  |  | 35 | 45 | 30 |  |  |
| CP3170 |  | CUP - Start Up CU Distribution | 20d | 2028-08-22 | 2028-09-18 | CP3130, CP2790 | 0d |  |  | 20 | 25 | 15 |  |  |
| CP3240 |  | Link - Start Up CU Distribution | 20d | 2028-09-19 | 2028-10-16 | CP3170, M3210, CP3250 | 0d |  |  | 20 | 25 | 15 |  |  |
|  | 10 | **L19 Modular Date Centres** |  | 2027-03-30 | 2028-06-02 |  |  |  |  |  |  |  |  |  |
| MD2150 |  | MDC - Piling & Foundations | 20d | 2027-03-30 | 2027-04-26 | LA2030 | 115d | 0d |  | 20 | 30 | 20 | Piling |  |
| MD2180 |  | MDC - Construct Slab,Power & FO Duct Banks | 40d | 2027-04-28 | 2027-06-25 | MD2150 | 115d | 49d |  | 40 | 45 | 40 |  |  |
| MD2300 |  | MDC - Pull FO Backbone | 30d | 2027-09-03 | 2027-10-14 | MD2180, CP2440 | 66d | 0d |  | 30 | 40 | 30 |  |  |
| MD2370 |  | MDC - Install MDC | 10d | 2027-10-15 | 2027-10-28 | MD2300, EP2210 | 66d | 0d |  | 10 | 20 | 10 |  |  |
| MD2490 |  | MCD - Hookup | 40d | 2027-10-29 | 2027-12-23 | MD2370 | 66d | 46d |  | 40 | 40 | 30 |  |  |
| MD2830 |  | MDC - Energise & Make Ready for Loop Checking | 60d | 2028-03-07 | 2028-06-02 | MD2490, MV1030 | 20d |  |  | 60 | 65 | 55 |  |  |
|  | 11 | **L07 Spray Dryer Dispersion Building** |  | 2026-08-04 | 2030-05-16 |  |  |  |  |  |  |  |  |  |
|  | 1 | **SDD Detailed Design** |  | 2026-08-04 | 2027-02-11 |  |  |  |  |  |  |  |  |  |
| SD1910 |  | SDD - Design CSA for Shell & Core | 20d | 2026-08-04 | 2026-08-31 | BD1760, M1770 | 86d | 0d | Ireland-1 | 20 | 30 | 20 | S&C |  |
| SD2130 |  | SDD - Fitout Design IFC | 85d | 2026-10-05 | 2027-02-11 | SD1910, EP1650, EP1570, EP1590, EP1800, EP1810, EP1660 | 102d | 0d | Ireland-1 | 85 | 90 | 75 |  |  |
|  | 2 | **SDD Construction** |  | 2026-09-01 | 2028-12-06 |  |  |  |  |  |  |  |  |  |
|  | 1 | **SDD Bulk Lead Times** |  | 2026-09-01 | 2027-05-27 |  |  |  |  |  |  |  |  |  |
| SD2060 |  | SDD Structural Components Lead Time From IFC | 70d | 2026-09-01 | 2026-12-07 | SD1910, CT1820 | 87d | 59d |  | 70 | 75 | 65 |  | New |
| SD2350 |  | SDD - Offsite Piping Fabrication (Sufficient for Bulk Installation) | 70d | 2027-02-12 | 2027-05-27 | SD2130 | 101d | 73d |  | 70 | 75 | 50 |  | New |

| ID | WBS | Activity | Duration | Start | Finish | Predecessors | Total float | Free float | Likely | Max | Min | Shire Wild Card | Activity Type |
| --- | --- | --- | --- | --- | --- | --- | --- | --- | --- | --- | --- | --- | --- |
|  | 2 | **SDD - Shell & Core** |  | 2026-11-30 | 2027-09-07 |  |  |  |  |  |  |  |  |
| SD2080 |  | SDD - Piling & Foundations (to Start of Steel) | 65d | 2026-11-30 | 2027-03-09 | CT1860, CT1870, FD1880, PM1850, CT2070 | 28d | 0d | 65 | 70 | 50 | New | Piling |
| SD2330 |  | SDD - Shell & Core (to Start of Fit out) | 125d | 2027-03-10 | 2027-09-07 | SD2060, SD2080 | 28d | 0d | 125 | 140 | 100 | New | S&C |
|  | 3 | **SDD - Common & Utilities Fit Out** |  | 2027-09-08 | 2028-09-06 |  |  |  |  |  |  |  |  |
| SD2530 |  | SDD - Install HL Services & Central Racks | 40d | 2027-09-08 | 2027-11-02 | SD2350, SD2330 | 28d | 0d | 40 | 50 | 30 | New | FT |
| SD2610 |  | SDD - Install HL Services Finger Racks & Area Distribution | 50d | 2027-11-03 | 2028-01-19 | SD2530 | 28d | 0d | 50 | 55 | 40 | New | FT |
| SD2720 |  | SDD - Build Rooms - Utilities | 20d | 2028-01-20 | 2028-02-16 | SD2610 | 28d | 0d | 20 | 35 | 20 | New |  |
| SD2870 |  | SDD - Equipment Installation & Hook-up - Utilities | 60d | 2028-02-17 | 2028-05-15 | SD2610, EP2410, SD2720 | 28d | 0d | 60 | 70 | 55 | New |  |
| SD2990 |  | SDD - Grey Utilities, Test, Walkdown, Puchout & MC | 40d | 2028-05-16 | 2028-07-12 | SD2530, SD2860, SD2680, SD2870 | 28d | 0d | 40 | 50 | 40 | New |  |
| SD3180 |  | SDD - Clean Utilities, Test, Walkdown, Puchout & MC | 40d | 2028-07-13 | 2028-09-06 | SD2990 | 28d |  | 40 | 50 | 40 | New |  |
|  | 4 | **SDD - Wash Area/Lockers/Weigh & Dispense Fit Out** |  | 2027-11-03 | 2028-08-09 |  |  |  |  |  |  |  |  |
| SD2680 |  | SDD - HL Fit Out to Start of Wash Area Clean Rooms | 40d | 2027-11-03 | 2028-01-05 | SD2350, SD2330, SD2530 | 72d | 0d | 40 | 60 | 35 |  | FT |
| SD2850 |  | SDD - Install Clean Room/Walls to Start of Equipment Installation | 40d | 2028-01-06 | 2028-03-01 | SD2680 | 72d | 0d | 40 | 60 | 35 |  |  |
| SD3090 |  | SDD - Equip. Installation & Hook-up Wash Area (1st System) | 60d | 2028-03-02 | 2028-05-30 | SD2530, SD2850, EP2450, EP2460, EP2520, EP2290, EP2240, EP2280 | 72d | 0d | 60 | 75 | 55 |  |  |
| SD3310 |  | SDD - Wash Area Test, Walkdown, Puchout & MC 1st System | 50d | 2028-05-31 | 2028-08-09 | SD3090 | 72d | 23d | 50 | 55 | 45 |  |  |
|  | 5 | **SDD - PSD 4 Area Fit Out (All Floors)** |  | 2028-01-06 | 2028-09-27 |  |  |  |  |  |  |  |  |
| SD2860 |  | SDD - HL Fit Out to Start of PSD 4 Clean Room | 40d | 2028-01-06 | 2028-03-01 | SD2350, SD2330, SD2530, SD2680 | 77d | 0d | 40 | 60 | 35 |  | FT |
| SD3140 |  | SDD - Clean Room to Start of PSD 4 Area Equip. Installation | 40d | 2028-03-02 | 2028-04-28 | SD2860 | 77d | 0d | 40 | 60 | 35 |  |  |
| SD3350 |  | SDD - Equip. Installation & Hook-up PSD 4 Area | 60d | 2028-05-01 | 2028-07-26 | SD3140, SD2530, EP2450, EP2460, EP2520, EP2290, M2480 | 77d | 0d | 60 | 65 | 50 |  |  |
| SD3480 |  | SDD - Test, Walkdown, Puchout & MC - PSD 4 Area 1st Systems | 45d | 2028-07-27 | 2028-09-27 | SD3350 | 77d | 0d | 45 | 50 | 40 |  |  |
|  | 6 | **SDD - PSD 5 Area Fit Out (All Floors)** |  | 2028-03-02 | 2028-12-06 |  |  |  |  |  |  |  |  |
| SD3150 |  | SDD - HL Fit Out to Start of PSD 5 Area | 40d | 2028-03-02 | 2028-04-28 | SD2350, SD2330, SD2530, SD2680, SD2860 | 112d | 0d | 40 | 60 | 35 |  | FT |
| SD3370 |  | SDD - Clean Room to Start of PSD 5 Area Equip. Installation | 40d | 2028-05-01 | 2028-06-28 | SD3150 | 112d | 0d | 40 | 60 | 35 |  |  |
| SD3580 |  | SDD - Equip. Installation & Hook-up PSD 5 Area | 70d | 2028-06-29 | 2028-10-04 | SD3370, SD2530, EP2450, EP2460, EP2520, EP2290, EP2600 | 112d | 0d | 70 | 90 | 65 |  |  |
| SD3710 |  | SDD - Test, Walkdown, Puchout & MC - PSD 5 Area 1st Systems | 45d | 2028-10-05 | 2028-12-06 | SD3580 | 112d | 0d | 45 | 55 | 45 |  |  |

| ID | WBS | Activity | Type | Duration | Start | Finish | Predecessors | Total float | Free float | Likely | Max | Min | Activity Type | Alt Finish |
| --- | --- | --- | --- | --- | --- | --- | --- | --- | --- | --- | --- | --- | --- | --- |
|  | 7 | **SDD - Main Elec Room** |  |  | 2027-11-03 | 2028-04-20 |  |  |  |  |  |  |  |  |
| SD2730 |  | SDD - HL Fit Out & Elec/UPS Rooms Construction |  | 40d | 2027-11-03 | 2028-01-05 | SD2130, SD2330, SD2530 | 53d | 0d | 40 | 45 | 40 | FT |  |
| SD2840 |  | SDD - Install Test & Terminate Unit Substation |  | 45d | 2028-01-06 | 2028-03-08 | SD2730, EP2230 | 53d | 0d | 45 | 55 | 40 |  |  |
| SD2950 |  | SDD - Unit Sub. UPS & MCC MC |  | 30d | 2028-03-09 | 2028-04-20 | SD2840 | 53d | 0d | 30 | 35 | 30 |  |  |
|  | 3 | **SDD - C&Q** |  |  | 2028-04-20 | 2029-11-09 |  |  |  |  |  |  |  |  |
|  | 1 | **SDD - C&Q Utilities** |  |  | 2028-04-20 | 2028-11-27 |  |  |  |  |  |  |  |  |
| SD3040 |  | SDD - Unit Substation Power On | milestone | 0d | 2028-04-20 | 2028-04-20 | SD2950 | 53d | 0d | 0 |  |  |  | 2028-05-23 |
| SD3030 |  | SDD - Commission & Start Up LV/UPS Distribution |  | 30d | 2028-04-21 | 2028-06-07 | SD2730, SD2950, SD3040 | 53d | 0d | 30 | 35 | 10 |  |  |
| SD3250 |  | SDD - Startup IDF's & Make Ready for Loop Checking |  | 40d | 2028-06-08 | 2028-08-02 | SD3030, SD3040, M4174 | 53d |  | 40 | 45 | 30 |  |  |
| SD3340 |  | SDD - Start Up GU Distribution/Waste Collection (to CU Start Up) |  | 30d | 2028-08-01 | 2028-09-11 | CP3070, SD2990 | 25d | 0d | 30 | 35 | 25 |  |  |
| SD3430 |  | SDD - Start Up CU Storage & Distribution |  | 30d | 2028-10-17 | 2028-11-27 | SD3340, CP3240, SD3180, SD3250, WW1090 | 0d |  | 30 | 45 | 25 |  |  |
|  | 2 | **SDD - C&Q Wash Area/Process Services** |  |  | 2028-09-12 | 2029-07-16 |  |  |  |  |  |  |  |  |
| SD3490 |  | SDD - C&Q Weigh & Dispense System |  | 60d | 2028-09-12 | 2028-12-04 | SD3310, SD3340, SD3040 | 49d |  | 60 | 80 | 55 |  |  |
| SD3500 |  | SDD - Startup Chemical Storage |  | 25d | 2028-11-28 | 2029-01-09 | SD3310, SD3430 | 0d |  | 25 | 30 | 25 |  |  |
| SD3590 |  | SDD - Startup IBC Washing Systems (Skid & Distribution) |  | 30d | 2029-01-10 | 2029-02-20 | SD3310, SD3430, SD3500 | 84d | 0d | 30 | 40 | 30 |  |  |
| SD3610 |  | SDD - Startup CIP Skids & Arrays |  | 29d | 2029-01-10 | 2029-02-19 | SD3430, SD3500, SV1040 | 0d |  | 29 | 40 | 25 |  |  |
| SD3770 |  | SDD - C&Q Parts Washer |  | 60d | 2029-02-21 | 2029-05-18 | SD3310, SD3430, SD3500, SD3590 | 84d | 0d | 60 | 80 | 55 |  |  |
| SD3990 |  | SDD - Cleaning Cycle Development |  | 40d | 2029-05-22 | 2029-07-16 | SD3770 | 84d | 66d | 40 | 60 | 40 |  |  |
|  | 3 | **SDD - C&Q PSD 4** |  |  | 2028-09-28 | 2029-07-13 |  |  |  |  |  |  |  |  |
| SD3690 |  | SDD - C&Q - PSD 4 HVAC C&Q |  | 60d | 2028-09-28 | 2028-12-20 | SD3480, SD3040 | 162d | 0d | 60 | 80 | 55 |  |  |
| SD3600 |  | SDD - C&Q - Start Up PSD 4 Solution Make Up |  | 20d | 2028-11-28 | 2029-01-02 | SD3430, SD3480, SV1040 | 34d |  | 20 | 30 | 15 |  |  |
| SD3840 |  | SDD - C&Q - PSD 4 Post Drying (Post HVAC VTP) |  | 60d | 2028-12-21 | 2029-03-22 | SD3690 | 162d | 10d | 60 | 80 | 55 |  |  |
| SD3780 |  | SDD - C&Q - PSD 4 |  | 100d | 2029-02-20 | 2029-07-13 | SD3600, SD3480, SD3490, SD3610, WW1090 | 0d |  | 100 | 110 | 90 |  | 2029-06-04 |
|  | 4 | **SDD - C&Q PSD 5** |  |  | 2028-12-07 | 2029-11-09 |  |  |  |  |  |  |  |  |
| SD3830 |  | SDD - C&Q - PSD 5 Start Up Solution Make Up |  | 20d | 2028-12-07 | 2029-01-11 | SD3430, SD3710, SV1040 | 127d |  | 20 | 30 | 15 |  |  |
| SD3900 |  | SDD - C&Q - PSD 5 HVAC C&Q |  | 60d | 2028-12-07 | 2029-03-08 | SD3710 | 112d | 0d | 60 | 80 | 55 |  |  |
| SD4020 |  | SDD - C&Q - PSD 5 Post Drying (Post HVAC VTP) |  | 60d | 2029-03-09 | 2029-06-06 | SD3900 | 112d |  | 60 | 80 | 55 |  |  |
| SD4010 |  | SDD - C&Q - PSD 5 |  | 85d | 2029-07-16 | 2029-11-09 | SD3830, SD3480, SD3780, SD3610 | 0d |  | 85 | 120 | 70 |  | 2029-10-17 |

Notes:
- SD3040: Expenses: SDD - Unit Substation Power On - (cost) 0

| ID | WBS | Activity | Type | Duration | Start | Finish | Predecessors | Total float | Free float | Calendar | Likely | Max | Min | Alt Finish | Shire Wild Card | Activity Type |
| --- | --- | --- | --- | --- | --- | --- | --- | --- | --- | --- | --- | --- | --- | --- | --- | --- |
|  | 5 | **SDD - SDD HVAC** |  |  | 2028-12-07 | 2029-04-06 |  |  |  |  |  |  |  |  |  |  |
| SD3790 |  | SDD - Final HVAC MC (Post Completion of Hook Up) |  | 30d | 2028-12-07 | 2029-01-25 | SD3580, SD3350, SD3710 | 152d | 0d |  | 30 | 40 | 30 |  |  |  |
| SD3930 |  | SDD - Final HVAC C&Q |  | 50d | 2029-01-26 | 2029-04-06 | SD3790 | 152d | 0d |  | 50 | 65 | 45 | 2029-04-04 |  |  |
| SD3940 |  | SDD - Facility "Go Clean" | milestone | 0d | 2029-04-06 | 2029-04-06 | SD3930, SD3900, SD3690, SD3840 | 152d | 0d |  | 0 |  |  |  |  |  |
|  | 4 | **SDD - PQ & Engineering Runs** |  |  | 2029-08-07 | 2030-05-16 |  |  |  |  |  |  |  |  |  |  |
|  | 1 | **SDD - Common** |  |  | 2029-08-07 | 2030-01-15 |  |  |  |  |  |  |  |  |  |  |
| SD4070 |  | SDD - EMPQ (Assumes 6 Zones Incl Baseline) |  | 65d | 2029-08-07 | 2029-11-05 | SD3940, LA3560, AD4370, M2590, M3810 | 130d | 0d |  | 65 | 85 | 65 | 2029-07-19 |  |  |
| SD4080 |  | SDD - Clean Qualified | milestone | 0d | 2029-11-05 | 2029-11-05 | SD4070 | 130d | 112d |  | 0 |  |  |  |  |  |
| SD4090 |  | SDD - PWEC PQ1 & PQ2 (Baseline Sampling Ongoing from Start-up) |  | 40d | 2029-11-12 | 2030-01-15 | SD4010, LA3560 | 86d | 68d |  | 40 | 45 | 40 | 2029-12-13 |  |  |
|  | 2 | **SDD - Train 1** |  |  | 2029-10-17 | 2030-04-22 |  |  |  |  |  |  |  |  |  |  |
| SD4110 |  | SDD - PSD 4 PSD 4 PQ's & Engineering Runs |  | 126d | 2029-10-17 | 2030-04-22 | SD3770, SD3990, SD3840, SD3780, LA3560, SD3490, M3950, M4206, AD4370 | 18d | 0d |  | 126 | 130 | 100 |  |  |  |
| SD4417 |  | SDD - 1st Train (PSD 4) PV Ready | milestone | 0d | 2030-04-22 | 2030-04-22 | SD4110, SD4020, SD4090, SD4080 | 18d |  |  | 0 |  |  | 2029-12-20 |  |  |
|  | 4 | **SDD - Balance of Plant** |  |  | 2029-11-12 | 2030-05-16 |  |  |  |  |  |  |  |  |  |  |
| SD4400 |  | SDD - PSD 5 Final PQ's & Engineering Runs |  | 126d | 2029-11-12 | 2030-05-16 | SD4010, SD4020, SD3900, LA3560, M4206 | 0d |  |  | 126 | 130 | 100 |  |  |  |
| SD4410 |  | SDD - PSD 5 PV Ready (Full Phase 1 Scope) | milestone | 0d | 2030-05-16 | 2030-05-16 | SD4400 | 0d |  |  | 0 |  |  | 2030-04-11 |  |  |
|  | 12 | **L08 Oral Solid Dosage Building** |  |  | 2026-08-04 | 2030-05-16 |  |  |  |  |  |  |  |  |  |  |
|  | 1 | **OSD Detailed Design** |  |  | 2026-08-04 | 2027-02-11 |  |  |  |  |  |  |  |  |  |  |
| OS1920 |  | OSD - Design CSA for Shell & Core |  | 20d | 2026-08-04 | 2026-08-31 | BD1760, M1770 | 72d | 0d | Ireland-1 | 20 | 25 | 20 |  | New | S&C |
| OS2140 |  | OSD - Fitout Design IFC |  | 85d | 2026-10-05 | 2027-02-11 | OS1920, EP1650, EP1570, EP1590, EP1800, EP1810, EP1560, EP1580, EP1610, EP1620, EP1660 | 88d | 0d | Ireland-1 | 85 | 90 | 80 |  | New |  |
|  | 2 | **OSD Construction** |  |  | 2026-09-01 | 2029-01-18 |  |  |  |  |  |  |  |  |  |  |
|  | 01 | **OSD Bulk Lead Times** |  |  | 2026-09-01 | 2027-05-27 |  |  |  |  |  |  |  |  |  |  |
| OS2070 |  | OSD - Structural Steel Lead Time |  | 70d | 2026-09-01 | 2026-12-07 | OS1920, CT1820 | 73d | 59d |  | 70 | 75 | 65 |  | New |  |
| OS2360 |  | OSD - Offsite Piping Fabrication (Sufficient for Bulk Installation) |  | 70d | 2027-02-12 | 2027-05-27 | OS2140 | 87d | 73d |  | 70 | 75 | 50 |  | New |  |
|  | 02 | **OSD - Shell & Core** |  |  | 2026-11-30 | 2027-09-07 |  |  |  |  |  |  |  |  |  |  |
| OS2090 |  | OSD - Piling & Foundations (to Start of Steel) |  | 65d | 2026-11-30 | 2027-03-09 | CT1860, CT1870, FD1880, PM1850, CT2070 | 14d | 0d |  | 65 | 75 | 40 |  | New | Piling |
| OS2340 |  | OSD - Shell & Core (to Start of Fit out) |  | 125d | 2027-03-10 | 2027-09-07 | OS2070, OS2090 | 14d | 0d |  | 125 | 140 | 115 |  | New | S&C |

Notes:
- SD3940: Expenses: SDD - Facility "Go Clean" - (cost) 0
- SD4080: Expenses: SDD - Clean Qualified - (cost) 0
- SD4417: Expenses: SDD - Phase 1 PV Ready - (cost) 0
- SD4410: Expenses: SDD - Phase 1 PV Ready - (cost) 0

| ID | WBS | Activity | Duration | Start | Finish | Predecessors | Total float | Free float | Likely | Max | Min | Shire Wild Card | Activity Type |
| --- | --- | --- | --- | --- | --- | --- | --- | --- | --- | --- | --- | --- | --- |
|  | 03 | **OSD - Common & Utilities Fit Out** |  | 2027-09-08 | 2028-06-14 |  |  |  |  |  |  |  |  |
| OS2540 |  | OSD - Install HL Services & Central Racks | 40d | 2027-09-08 | 2027-11-02 | OS2360, OS2340 | 14d | 0d | 40 | 45 | 35 | New | FT |
| OS2620 |  | OSD - Install HL Services, Finger Racks & Area Distribution | 50d | 2027-11-03 | 2028-01-19 | OS2540 | 78d | 0d | 50 | 60 | 40 | New | FT |
| OS2770 |  | OSD - Equipment Installation & Hook-up - Utilities | 50d | 2028-01-20 | 2028-03-29 | OS2620, EP2240, EP2500 | 78d | 0d | 50 | 60 | 45 | New |  |
| OS3190 |  | OSD - Grey Utility Test, Walkdown, Puchout & MC | 30d | 2028-03-30 | 2028-05-15 | OS2540, OS2770, OS2750, OS2630 | 78d | 0d | 30 | 50 | 30 | New |  |
| OS3260 |  | OSD - Clean Utility Test, Walkdown, Puchout & MC | 20d | 2028-05-16 | 2028-06-14 | OS3190 | 88d |  | 20 | 40 | 20 | New |  |
|  | 04 | **OSD - Wash Area/Weigh & Dispense Fit Out/Tablet Inspection** |  | 2027-11-03 | 2028-09-26 |  |  |  |  |  |  |  |  |
| OS2630 |  | OSD - HL Fit Out to Start of Wash Area Clean Rooms | 40d | 2027-11-03 | 2028-01-05 | OS2360, OS2340, OS2540 | 14d | 0d | 40 | 50 | 40 |  | FT |
| OS2820 |  | OSD - Clean Room to Start of Equipment Installation | 70d | 2028-01-06 | 2028-04-12 | OS2630 | 14d | 0d | 70 | 80 | 60 |  |  |
| OS3100 |  | OSD - Equipment Installation & Hook-up Wash Area & Weigh & Dispense | 70d | 2028-04-13 | 2028-07-26 | OS2540, OS2820, EP2450, EP2460, EP2520, EP2290, EP2310 | 14d | 0d | 70 | 80 | 60 |  |  |
| OS3320 |  | OSD - Wash Area Test, Walkdown, Puchout & MC 1st Systems | 44d | 2028-07-27 | 2028-09-26 | OS3100 | 14d | 0d | 44 | 50 | 40 |  |  |
|  | 05 | **OSD - Compression & Coating #1** |  | 2028-01-06 | 2028-09-20 |  |  |  |  |  |  |  |  |
| OS2750 |  | OSD - HL Fit Out to Start of Compression & Coating #1 | 40d | 2028-01-06 | 2028-03-01 | OS2360, OS2340, OS2540, OS2630 | 35d | 0d | 40 | 50 | 40 |  | FT |
| OS2880 |  | OSD - Clean Room to Start of Equip. Install Compression & Coating #1 | 40d | 2028-03-02 | 2028-04-28 | OS2750 | 35d | 0d | 40 | 50 | 35 |  |  |
| OS3110 |  | OSD - Equip. Installation & Hook-up Compression & Coating #1 | 60d | 2028-05-01 | 2028-07-26 | OS2540, OS2880, EP2450, EP2460, EP2520, EP2290, EP2550, EP2470, EP2640, EP2390, M2400, M2650 | 35d | 0d | 60 | 70 | 55 |  |  |
| OS3270 |  | OSD - Test, Walkdown, Puchout & MC - 1st Systems Compression & Coating #1 | 40d | 2028-07-27 | 2028-09-20 | OS3110 | 35d | 0d | 40 | 50 | 40 |  |  |
|  | 06 | **OSD - Compression & Coating #2** |  | 2028-01-06 | 2028-09-20 |  |  |  |  |  |  |  |  |
| OS2760 |  | OSD - HL Fit Out to Start of Compression & Coating #2 | 40d | 2028-01-06 | 2028-03-01 | OS2360, OS2340, OS2540, OS2630 | 53d | 0d | 40 | 45 | 40 |  | FT |
| OS2890 |  | OSD - Clean Room to Start of Equip. Install Compression & Coating #2 | 40d | 2028-03-02 | 2028-04-28 | OS2760 | 93d | 0d | 40 | 45 | 35 |  |  |
| OS3120 |  | OSD - Equip. Installation & Hook-up Compression & Coating #2 | 60d | 2028-05-01 | 2028-07-26 | OS2540, OS2890, EP2450, EP2460, EP2520, EP2290, EP2640, EP2390 | 93d | 0d | 60 | 70 | 55 |  |  |
| OS3280 |  | OSD - Test, Walkdown, Puchout & MC - 1st Systems Compression & Coating #2 | 40d | 2028-07-27 | 2028-09-20 | OS3120 | 93d | 43d | 40 | 50 | 40 |  |  |
|  | 07 | **OSD - Compression & Coating #3** |  | 2028-03-02 | 2028-11-15 |  |  |  |  |  |  |  |  |
| OS2900 |  | OSD - HL Fit Out to Start of Compression & Coating #3 | 40d | 2028-03-02 | 2028-04-28 | OS2750, OS2760 | 58d | 0d | 40 | 45 | 20 |  | FT |
| OS3000 |  | OSD - Clean Room to Start of Equip. Install Compression & Coating #3 | 40d | 2028-05-01 | 2028-06-28 | OS2900 | 58d | 0d | 40 | 50 | 35 |  |  |
| OS3290 |  | OSD - Equip. Installation & Hook-up Compression & Coating #3 | 60d | 2028-06-29 | 2028-09-20 | OS3000, OS2540, EP2450, EP2460, EP2520, EP2290, EP2390 | 58d | 0d | 60 | 70 | 55 |  |  |
| OS3400 |  | OSD - Test, Walkdown, Puchout & MC - 1st Systems Compression & Coating #3 | 40d | 2028-09-21 | 2028-11-15 | OS3290 | 58d | 3d | 40 | 50 | 40 |  |  |

| ID | WBS | Activity | Type | Duration | Start | Finish | Predecessors | Total float | Free float | Likely | Max | Min | Activity Type | Alt Finish |
| --- | --- | --- | --- | --- | --- | --- | --- | --- | --- | --- | --- | --- | --- | --- |
|  | 08 | **OSD - Compression & Coating #4** |  |  | 2028-03-02 | 2028-11-15 |  |  |  |  |  |  |  |  |
| OS2910 |  | OSD - HL Fit Out to Start of Compression & Coating #4 |  | 40d | 2028-03-02 | 2028-04-28 | OS2760 | 53d | 0d | 40 | 45 | 20 | FT |  |
| OS3010 |  | OSD - Clean Room to Start of Equip. Install Compression & Coating #4 |  | 40d | 2028-05-01 | 2028-06-28 | OS2910 | 53d | 0d | 40 | 50 | 35 |  |  |
| OS3300 |  | OSD - Equip. Installation & Hook-up Compression & Coating #4 |  | 60d | 2028-06-29 | 2028-09-20 | OS3010, OS2540, EP2450, EP2460, EP2520, EP2290, EP2390 | 53d | 0d | 60 | 70 | 55 |  |  |
| OS3410 |  | OSD - Test, Walkdown, Puchout & MC - 1st Systems Compression & Coating #4 |  | 40d | 2028-09-21 | 2028-11-15 | OS3300 | 53d | 38d | 40 | 50 | 40 |  |  |
|  | 09 | **OSD - Compression & Coating #5** |  |  | 2028-05-01 | 2029-01-18 |  |  |  |  |  |  |  |  |
| OS3020 |  | OSD - HL Fit Out to Start of Compression & Coating #5 |  | 40d | 2028-05-01 | 2028-06-28 | OS2750, OS2900, OS2910 | 98d | 0d | 40 | 45 | 20 | FT |  |
| OS3200 |  | OSD - Clean Room to Start of Equip. Install Compression & Coating #5 |  | 40d | 2028-06-29 | 2028-08-23 | OS3020 | 98d | 0d | 40 | 50 | 35 |  |  |
| OS3420 |  | OSD - Equip. Installation & Hook-up Compression & Coating #5 |  | 60d | 2028-08-24 | 2028-11-15 | OS3200, OS2540, EP2450, EP2460, EP2520, EP2290, EP2390 | 98d | 0d | 60 | 70 | 55 |  |  |
| OS3520 |  | OSD - Test, Walkdown, Puchout & MC - 1st Systems Compression & Coating #5 |  | 40d | 2028-11-16 | 2029-01-18 | OS3420 | 98d | 43d | 40 | 50 | 40 |  |  |
|  | 10 | **OSD - Main Elec Room** |  |  | 2027-11-03 | 2028-04-20 |  |  |  |  |  |  |  |  |
| OS2570 |  | OSD - HL Fit Out & Elec Room Construction |  | 40d | 2027-11-03 | 2028-01-05 | OS2540 | 23d | 0d | 40 | 45 | 35 | FT |  |
| OS2800 |  | OSD - Install Test & Terminate Unit Substation |  | 45d | 2028-01-06 | 2028-03-08 | OS2570, EP2230 | 23d | 0d | 45 | 55 | 40 |  |  |
| OS2930 |  | OSD - Unit Sub & MCC MC |  | 30d | 2028-03-09 | 2028-04-20 | OS2800 | 23d | 0d | 30 | 35 | 25 |  |  |
|  | 3 | **OSD - C&Q** |  |  | 2028-04-20 | 2029-11-05 |  |  |  |  |  |  |  |  |
|  | 1 | **OSD - C&Q Utilities & CIP** |  |  | 2028-04-20 | 2029-01-16 |  |  |  |  |  |  |  |  |
| OS2955 |  | OSD - Unit Substation Power On | milestone | 0d | 2028-04-20 | 2028-04-20 | OS2930 | 23d | 0d | 0 | 0 | 0 |  | 2028-05-04 |
| OS2960 |  | OSD - Commission & Start Up LV/UPS Distribution |  | 30d | 2028-04-21 | 2028-06-07 | OS2570, OS2930, OS2955 | 23d | 0d | 30 | 40 | 25 |  | 2028-05-04 |
| OS3160 |  | OSD - Startup IDF's & Make Ready for Loop Checking |  | 40d | 2028-06-08 | 2028-08-02 | OS2960, M4176 | 23d | 0d | 40 | 45 | 35 |  |  |
| OS3330 |  | OSD - Start Up GU Distribution/Waste Collection (to CU Start Up) |  | 30d | 2028-08-03 | 2028-09-13 | OS3190, OS3160, CP3070, M4176 | 23d | 5d | 30 | 40 | 25 |  |  |
| OS3380 |  | OSD - Start Up CU Storage & Distribution |  | 30d | 2028-10-17 | 2028-11-27 | OS3260, OS3330, CP3240 | 0d |  | 30 | 35 | 30 |  |  |
| OS3440 |  | OSD - C&Q Chemical Storage |  | 20d | 2028-11-28 | 2029-01-02 | OS2770, OS3380, SV1040 | 85d | 0d | 20 | 40 | 20 |  |  |
| OS3470 |  | OSD - Startup CIP Skids & Arrays |  | 30d | 2028-11-28 | 2029-01-16 | OS3380 | 0d |  | 30 | 35 | 30 |  |  |
|  | 2 | **OSD - Wash Area/Weigh & Dispense Fit Out/Tablet Inspection** |  |  | 2028-09-27 | 2029-07-09 |  |  |  |  |  |  |  |  |
| OS3460 |  | OSD - C&Q Weigh & Dispense |  | 60d | 2028-09-27 | 2028-12-19 | OS3320, OS3330 | 14d |  | 60 | 70 | 60 |  |  |
| OS3540 |  | OSD - C&Q Bin to Bin Milling |  | 80d | 2028-09-27 | 2029-01-24 | OS3320 | 199d | 185d | 80 | 90 | 60 |  |  |
| OS3530 |  | OSD - C&Q Startup IBC Washing Systems (Skid & Distribution) |  | 30d | 2029-01-03 | 2029-02-13 | OS3320, OS3380, OS3440 | 85d | 0d | 30 | 40 | 30 |  |  |
| OS3720 |  | OSD - C&Q Tablet Inspection |  | 60d | 2029-02-14 | 2029-05-11 | OS3320, OS3380, OS3440, OS3530 | 125d | 111d | 60 | 70 | 55 |  |  |
| OS3740 |  | OSD - C&Q Parts Washer |  | 60d | 2029-02-14 | 2029-05-11 | OS3320, OS3380, OS3440, OS3530 | 85d | 0d | 60 | 70 | 55 |  |  |
| OS3960 |  | OSD - Cleaning Cycle Development |  | 40d | 2029-05-14 | 2029-07-09 | OS3740 | 85d | 71d | 40 | 60 | 40 |  |  |

| ID | WBS | Activity | Duration | Start | Finish | Predecessors | Total float | Free float | Likely | Max | Min | Alt Finish |
| --- | --- | --- | --- | --- | --- | --- | --- | --- | --- | --- | --- | --- |
|  | 3 | **OSD - C&Q Compression & Coating #1** |  | 2028-09-21 | 2029-05-03 |  |  |  |  |  |  |  |
| OS3390 |  | OSD - C&Q - HVAC C&Q (C&C#1) | 43d | 2028-09-21 | 2028-11-20 | OS3270, OS3330 | 35d | 0d | 43 | 50 | 35 |  |
| OS3450 |  | OSD - C&Q -Start Up Solution Make Up (C&C#1) | 30d | 2028-11-28 | 2029-01-16 | OS3270, OS3380, SV1040 | 0d |  | 30 | 30 | 20 |  |
| OS3700 |  | OSD - C&Q - Tablet Coating (Post HVAC VTP) (C&C#1) | 75d | 2029-01-17 | 2029-05-03 | OS3390, OS3450, OS3470, OS3470 FF, WW1090, SV1040 | 0d |  | 75 | 80 | 65 | 2029-03-13 |
| OS3730 |  | OSD - C&Q - OSD Tablet Press (C&C#1) | 75d | 2029-01-17 | 2029-05-03 | OS3270, OS3460, OS3470, OS3450, WW1090 | 0d |  | 75 | 85 | 65 |  |
|  | 4 | **OSD - C&Q Compression & Coating #2** |  | 2028-11-21 | 2029-08-06 |  |  |  |  |  |  |  |
| OS3510 |  | OSD - C&Q - HVAC C&Q (C&C#2) | 40d | 2028-11-21 | 2029-01-23 | OS3280, OS3390 | 70d |  | 40 | 45 | 35 |  |
| OS3550 |  | OSD - C&Q -Start Up Solution Make Up (C&C#2) | 30d | 2029-01-17 | 2029-02-27 | OS3280, OS3380, OS3410, OS3450, OS3390 | 15d | 0d | 30 | 40 | 30 |  |
| OS3850 |  | OSD - C&Q - Tablet Coating (Post HVAC VTP) (C&C#2) | 65d | 2029-05-04 | 2029-08-06 | OS3390, OS3510, OS3550, OS3700, OS3470 | 0d |  | 65 | 75 | 55 | 2029-06-08 |
| OS3910 |  | OSD - C&Q - OSD Tablet Press (C&C#2) | 65d | 2029-05-04 | 2029-08-06 | OS3270, OS3470, OS3730 | 0d |  | 65 | 70 | 55 |  |
|  | 5 | **OSD - C&Q Compression & Coating #3** |  | 2028-11-21 | 2029-08-06 |  |  |  |  |  |  |  |
| OS3620 |  | OSD - C&Q - HVAC C&Q (C&C#3) | 40d | 2028-11-21 | 2029-01-23 | OS3400, OS3390 | 55d | 0d | 40 | 50 | 35 |  |
| OS3630 |  | OSD - C&Q -Start Up Solution Make Up (C&C#3) | 30d | 2029-02-28 | 2029-04-11 | OS3400, OS3550 | 15d | 0d | 30 | 40 | 30 |  |
| OS3860 |  | OSD - C&Q - Tablet Coating (Post HVAC VTP) (C&C#3) | 65d | 2029-05-04 | 2029-08-06 | OS3620, OS3630, OS3400, OS3700 | 0d |  | 65 | 65 | 55 |  |
| OS3920 |  | OSD - C&Q - OSD Tablet Press (C&C#3) | 65d | 2029-05-04 | 2029-08-06 | OS3620, OS3400, OS3730 | 0d |  | 65 | 75 | 50 |  |
|  | 6 | **OSD - C&Q Compression & Coating #4** |  | 2029-01-24 | 2029-11-05 |  |  |  |  |  |  |  |
| OS3760 |  | OSD - C&Q - HVAC C&Q (C&C#4) | 40d | 2029-01-24 | 2029-03-20 | OS3410, OS3620 | 55d | 0d | 40 | 50 | 35 |  |
| OS3750 |  | OSD - C&Q -Start Up Solution Make Up (C&C#4) | 30d | 2029-04-12 | 2029-05-28 | OS3410, OS3630 | 20d | 0d | 30 | 40 | 30 |  |
| OS3980 |  | OSD - C&Q - Tablet Coating (Post HVAC VTP) (C&C#4) | 65d | 2029-08-07 | 2029-11-05 | OS3760, OS3860, OS3850 | 0d |  | 65 | 65 | 55 |  |
| OS4040 |  | OSD - C&Q - OSD Tablet Press (C&C#4) | 65d | 2029-08-07 | 2029-11-05 | OS3760, OS3750, OS3920, OS3910 | 0d |  | 65 | 75 | 60 |  |
|  | 7 | **OSD - C&Q Compression & Coating #5** |  | 2029-03-21 | 2029-11-05 |  |  |  |  |  |  |  |
| OS3880 |  | OSD - C&Q - HVAC C&Q (C&C#5) | 40d | 2029-03-21 | 2029-05-18 | OS3520, OS3760 | 55d | 0d | 40 | 50 | 35 |  |
| OS3820 |  | OSD - C&Q -Start Up Solution Make Up (C&C#5) | 30d | 2029-05-29 | 2029-07-09 | OS3520, OS3750 | 20d |  | 30 | 40 | 30 |  |
| OS3970 |  | OSD - C&Q - Tablet Coating (Post HVAC VTP) (C&C#5) | 65d | 2029-08-07 | 2029-11-05 | OS3880, OS3520, OS3860 | 0d |  | 65 | 70 | 55 |  |
| OS4030 |  | OSD - C&Q - OSD Tablet Press (C&C#5) | 65d | 2029-08-07 | 2029-11-05 | OS3880, OS3820, OS3520, OS3920 | 0d |  | 65 | 75 | 50 |  |

| ID | WBS | Activity | Type | Duration | Start | Finish | Predecessors | Total float | Free float | Calendar | Likely | Max | Min | Alt Finish |
| --- | --- | --- | --- | --- | --- | --- | --- | --- | --- | --- | --- | --- | --- | --- |
|  | 8 | **OSD - OSD HVAC** |  |  | 2028-11-16 | 2029-05-18 |  |  |  |  |  |  |  |  |
| OS3670 |  | OSD - Final HVAC MC (Post Completion of Hook Up) |  | 50d | 2028-11-16 | 2029-02-01 | OS3110, OS3120, OS3290, OS3300, OS3420 | 144d | 0d |  | 50 | 65 | 45 |  |
| OS3800 |  | OSD - Final HVAC C&Q |  | 50d | 2029-02-02 | 2029-04-13 | OS3670, M3680 | 144d | 23d |  | 50 | 65 | 45 | 2029-02-16 |
| OS3870 |  | OSD - Facility "Go Clean" | milestone | 0d | 2029-05-18 | 2029-05-18 | OS3390, OS3700, OS3510, OS3800, OS3880, OS3760 | 121d | 0d |  | 0 |  |  |  |
|  | 4 | **OSD - PQ & Engineering Runs** |  |  | 2029-08-07 | 2030-05-16 |  |  |  |  |  |  |  |  |
|  | 1 | **OSD - Common** |  |  | 2029-08-07 | 2030-01-09 |  |  |  |  |  |  |  |  |
| OS4050 |  | OSD - EMPQ (Assumes 8 Zones, Incl Baseline) |  | 75d | 2029-08-07 | 2029-11-19 | OS3870, LA3560, AD4370 | 120d | 0d |  | 75 | 85 | 70 | 2029-09-19 |
| OS4100 |  | OSD - PUW PQ1 & PQ2 (Baseline Sampling Ongoing from Start-up) |  | 40d | 2029-11-06 | 2030-01-09 | OS3910, LA3560, OS3820, OS4030, OS3970 | 90d | 75d |  | 40 | 60 | 40 |  |
| OS4060 |  | OSD - Clean Qualified | milestone | 0d | 2029-11-19 | 2029-11-19 | OS4050 | 120d | 105d |  | 0 |  |  |  |
|  | 2 | **OSD - Train 1** |  |  | 2029-10-17 | 2030-04-25 |  |  |  |  |  |  |  |  |
| OS4190 |  | OSD - Train 1 PQ's & Engineering Runs |  | 129d | 2029-10-17 | 2030-04-25 | OS3730, OS3700, OS3390, OS3550, OS3850, OS3910, OS3960, OS3720, OS3540, OS3530, OS3460, LA3560, M3890, M4206, AD4370 | 15d | 0d |  | 129 | 130 | 100 |  |
| OS4200 |  | OSD - 1st Train 1 PV Ready | milestone | 0d | 2030-04-25 | 2030-04-25 | OS4190, OS4100, OS4060 | 15d |  |  | 0 |  |  | 2029-12-11 |
|  | 3 | **OSD - Balance of Plant** |  |  | 2029-11-06 | 2030-05-16 |  |  |  |  |  |  |  |  |
| OS4140 |  | OSD - Final PQ's & Engineering Runs |  | 130d | 2029-11-06 | 2030-05-16 | OS3720, OS3850, OS3740, OS3970, OS4030, OS3960, OS3980, OS4040, OS3540, LA3560, OS3920, M4206 | 0d |  |  | 130 | 130 | 100 |  |
| OS4150 |  | OSD - Phase 1 PV Ready | milestone | 0d | 2030-05-16 | 2030-05-16 | OS3850, OS4100, OS4140, OS4060 | 0d |  |  | 0 |  |  | 2030-03-15 |
|  | 13 | **L03 Laboratory** |  |  | 2026-02-03 | 2029-08-06 |  |  |  |  |  |  |  |  |
|  | 1 | **Lab Design** |  |  | 2026-02-03 | 2027-12-09 |  |  |  |  |  |  |  |  |
| LA1300 |  | Lab. - Prepare RFQ |  | 20d | 2026-02-03 | 2026-03-02 | CD1200 | 131d | 0d | Ireland-1 | 20 | 30 | 20 |  |
| LA1680 |  | Lab. - Bid & Award |  | 70d | 2026-03-03 | 2026-06-12 | LA1300 | 131d | 0d | Ireland-1 | 70 | 90 | 65 |  |
| LA1930 |  | Lab. - Design to Start of Construction |  | 130d | 2026-06-15 | 2026-12-11 | LA1680 | 133d | 0d |  | 130 | 140 | 100 |  |
| LA3220 |  | Lab. - Issue MTO for Steel Procurement |  | 50d | 2026-06-15 | 2026-08-21 | LA1680 | 183d | 0d |  | 50 | 70 | 50 |  |
| LA2250 |  | Lab. - Design 60% |  | 140d | 2026-12-14 | 2027-07-13 | LA1930 | 281d | 0d |  | 140 | 150 | 135 |  |
| LA2580 |  | Lab. - Design 90% |  | 107d | 2027-07-14 | 2027-12-09 | LA2250 | 281d | 0d |  | 107 | 140 | 102 |  |
|  | 2 | **Lab Procurement** |  |  | 2026-08-24 | 2027-02-16 |  |  |  |  |  |  |  |  |
| LA4390 |  | Lab. - Steel Lead Time (From Mill Order to Start of Fab) |  | 30d | 2026-08-24 | 2026-10-02 | LA3220 | 183d | 50d |  | 30 | 40 | 30 |  |
| LA2040 |  | Lab. - Steel Fabrication |  | 40d | 2026-12-14 | 2027-02-16 | LA1930, LA3220, LA4390 | 133d | 28d |  | 40 | 50 | 40 |  |

Notes:
- OS3870: Expenses: OSD - Facility "Go Clean" - (cost) 0
- OS4060: Expenses: OSD - Clean Qualified - (cost) 0
- OS4200: Expenses: OSD - Phase 1 PV Ready - (cost) 0
- OS4150: Expenses: OSD - Phase 1 PV Ready - (cost) 0

| ID | WBS | Activity | Type | Duration | Start | Finish | Predecessors | Total float | Free float | Calendar | Likely | Max | Min | Activity Type | Alt Finish |
| --- | --- | --- | --- | --- | --- | --- | --- | --- | --- | --- | --- | --- | --- | --- | --- |
|  | 3 | **Lab Construction** |  |  | 2027-02-01 | 2028-08-28 |  |  |  |  |  |  |  |  |  |
| LA2030 |  | Lab. - Piling & Foundations |  | 40d | 2027-02-01 | 2027-03-29 | LA1930, PM1850, CT1870, CT2080 | 105d | 0d |  | 40 | 45 | 25 | Piling |  |
| LA2270 |  | Lab. - Shell & Core (to Slabs Available) |  | 130d | 2027-03-30 | 2027-10-01 | LA2030, LA2040 | 105d | 0d |  | 130 | 140 | 80 | S&C |  |
| AD4410 |  | Lab. - Fitout & Handover |  | 225d | 2027-10-04 | 2028-08-28 | LA2270 | 105d | 40d |  | 210 | 240 | 200 |  |  |
|  | 4 | **Lab CQ & Ops Readiness** |  |  | 2028-08-01 | 2029-08-06 |  |  |  |  |  |  |  |  |  |
| LA4400 |  | Lab - C&Q (Post Link Extension Construction) |  | 60d | 2028-08-01 | 2028-10-23 | CP2930, CP3070 | 65d | 0d |  | 60 | 80 | 55 |  |  |
| LA3360 |  | Lab - C&Q (Post Final MC) |  | 65d | 2028-10-24 | 2029-01-30 | LA2580, LA4400, MV1030, LA2270, AD4410 | 65d | 0d |  | 65 | 80 | 50 |  |  |
| LA4410 |  | Lab - C&Q Micro lab equipment |  | 100d | 2029-01-31 | 2029-06-25 | LA3360 | 65d | 0d |  | 100 | 120 | 60 |  |  |
| LA3570 |  | Lab - Microlab Ops Readiness (Method Familiarisation) |  | 30d | 2029-06-26 | 2029-08-06 | LA3360, LA4410 | 65d | 0d |  | 30 | 80 | 30 |  |  |
| LA3560 |  | Lab - Microlab Available to Support Baseline Sampling | milestone | 0d | 2029-08-06 | 2029-08-06 | LA3360, LA3570 | 65d | 0d |  | 0 |  |  |  | 2029-01-04 |
|  | 14 | **L02 Admin Building** |  |  | 2026-02-03 | 2029-01-02 |  |  |  |  |  |  |  |  |  |
|  | 1 | **Admin Design** |  |  | 2026-02-03 | 2028-02-25 |  |  |  |  |  |  |  |  |  |
| AD4200 |  | Admin. - Prepare RFQ |  | 20d | 2026-02-03 | 2026-03-02 | CD1200 | 272d | 0d | Ireland-1 | 20 | 30 | 20 |  |  |
| AD4210 |  | Admin. - Bid & Award |  | 70d | 2026-03-03 | 2026-06-12 | AD4200 | 272d | 0d | Ireland-1 | 70 | 90 | 65 |  |  |
| AD4220 |  | Admin. - Design to Start of Construction |  | 130d | 2026-06-15 | 2026-12-11 | AD4210 | 274d | 0d |  | 130 | 140 | 100 |  |  |
| AD4230 |  | Admin. - Design 60% |  | 140d | 2026-12-14 | 2027-07-13 | AD4220 | 334d | 0d |  | 140 | 150 | 135 |  |  |
| AD4240 |  | Admin. - Design 90% |  | 157d | 2027-07-14 | 2028-02-25 | AD4230 | 387d | 171d |  | 157 | 170 | 130 |  |  |
|  | 2 | **Admin Procurement** |  |  | 2026-12-14 | 2027-03-31 |  |  |  |  |  |  |  |  |  |
| AD4310 |  | Admin. - Steel Lead Time |  | 70d | 2026-12-14 | 2027-03-31 | AD4220 | 274d | 38d |  | 70 | 75 | 65 |  |  |
|  | 3 | **Admin Construction** |  |  | 2027-03-30 | 2028-10-02 |  |  |  |  |  |  |  |  |  |
| AD4250 |  | Admin. - Piling & Foundations |  | 40d | 2027-03-30 | 2027-05-28 | AD4220, LA2030, CT2090 | 236d | 0d |  | 40 | 50 | 30 | Piling |  |
| AD4260 |  | Admin. - Shell & Core (to Slabs Available) |  | 130d | 2027-05-31 | 2027-11-26 | AD4250, AD4310 | 236d | 0d |  | 130 | 140 | 120 | S&C |  |
| AD4270 |  | Admin. - Fitout & Handover |  | 210d | 2027-11-29 | 2028-10-02 | AD4230, AD4260 | 236d | 20d |  | 210 | 240 | 200 |  |  |
|  | 4 | **Admin C&Q** |  |  | 2028-08-01 | 2029-01-02 |  |  |  |  |  |  |  |  |  |
| AD4400 |  | Admin - Commissioning & Testing (Post Link Extension Construction) |  | 65d | 2028-08-01 | 2028-10-30 | CP2930, CP3070, MV1030 | 216d | 0d |  | 65 | 80 | 55 |  |  |
| AD4380 |  | Admin - Commissioning & Testing (Post Final MC) |  | 40d | 2028-10-31 | 2029-01-02 | AD4270, AD4240, AD4400 | 216d | 0d |  | 40 | 40 | 30 |  |  |
| AD4370 |  | Admin - Ready for Occupancy | milestone | 0d | 2029-01-02 | 2029-01-02 | AD4380 | 216d | 150d |  | 0 |  |  |  | 2028-08-08 |

Notes:
- LA3560: Expenses: Lab - Microlab Available to Support PQ Sampling - (cost) 0
- AD4370: Expenses: Admin - Ready for Occupancy - (cost) 0

| ID | WBS | Activity | Type | Duration | Start | Finish | Predecessors | Total float | Free float | Calendar | Likely | Max | Min | Activity Type | Alt Finish |
| --- | --- | --- | --- | --- | --- | --- | --- | --- | --- | --- | --- | --- | --- | --- | --- |
|  | 15 | **Warehouse & ASRS** |  |  | 2026-02-02 | 2029-10-17 |  |  |  |  |  |  |  |  |  |
|  | 1 | **Warehouse/ASRS - Design** |  |  | 2026-08-04 | 2027-02-26 |  |  |  |  |  |  |  |  |  |
| AR1830 |  | Warehouse - Design 30% |  | 30d | 2026-08-04 | 2026-09-14 | BD1760 | 75d | 0d | Ireland-1 | 30 | 40 | 30 |  |  |
| AR1940 |  | Warehouse - Design 60% |  | 40d | 2026-09-15 | 2026-11-10 | AR1830, AR1780, AR1690 | 165d | 0d | Ireland-1 | 40 | 45 | 40 |  |  |
| AR2100 |  | Warehouse - Design 90% |  | 70d | 2026-11-11 | 2027-02-26 | AR1940 | 165d | 151d | Ireland-1 | 70 | 80 | 70 |  |  |
|  | 2 | **Warehouse/ASRS - Procurement** |  |  | 2026-02-02 | 2027-07-30 |  |  |  |  |  |  |  |  |  |
|  | 1 | **ASRS & AGV** |  |  | 2026-02-02 | 2027-07-30 |  |  |  |  |  |  |  |  |  |
| AR1400 |  | ASRS & AGV - Prep RFQ |  | 42d | 2026-02-02 | 2026-03-31 | CD1200 | 130d | 0d |  | 42 | 50 | 35 |  |  |
| AR1780 |  | ASRS & AGV - Bid & Award Design |  | 85d | 2026-04-01 | 2026-08-04 | AR1400 | 130d | 0d |  | 85 | 90 | 70 |  |  |
| AR1960 |  | ASRS & AGV - Design |  | 85d | 2026-08-05 | 2026-12-01 | AR1780 | 130d | 0d |  | 85 | 120 | 85 |  |  |
| AR1990 |  | Warehouse/ASRS - Structural Steel Lead Time from IFC |  | 70d | 2026-09-15 | 2026-12-21 | AR1830 | 76d | 62d |  | 70 | 75 | 65 |  |  |
| AR2430 |  | ASRS & AGV - Offsite Manufacture |  | 161d | 2026-12-02 | 2027-07-30 | AR1960, AR1900 | 130d | 116d |  | 161 | 190 | 160 |  |  |
|  | 2 | **Cold Rooms** |  |  | 2026-02-02 | 2027-04-29 |  |  |  |  |  |  |  |  |  |
| AR1360 |  | Cold Room - Prep RFQ |  | 30d | 2026-02-02 | 2026-03-13 | CD1200 | 123d | 0d |  | 30 | 40 | 30 |  |  |
| AR1690 |  | Cold Room - Bid & Award Design |  | 70d | 2026-03-16 | 2026-06-26 | AR1360 | 123d | 0d |  | 70 | 80 | 60 |  |  |
| AR1900 |  | Cold Room - Design |  | 70d | 2026-06-29 | 2026-10-02 | AR1690 | 123d | 0d |  | 70 | 90 | 60 |  |  |
| AR2170 |  | Cold Room - Offsite Design & Manufacture |  | 140d | 2026-10-05 | 2027-04-29 | AR1900 | 123d | 109d |  | 140 | 180 | 135 |  |  |
|  | 3 | **Warehouse/ASRS - Warehouse Construction** |  |  | 2027-02-01 | 2028-01-18 |  |  |  |  |  |  |  |  |  |
| AR1950 |  | Warehouse - Piling & Foundations to Start of Steel |  | 40d | 2027-02-01 | 2027-03-29 | CT1860, CT1870, PM1850, CT2080 | 14d | 0d |  | 40 | 50 | 30 | Piling |  |
| AR2160 |  | Warehouse - Shell & Core to Start of Fit Out |  | 131d | 2027-03-30 | 2027-10-04 | AR1950, AR1990 | 14d | 0d |  | 131 | 140 | 80 | S&C |  |
| AR2420 |  | Warehouse - Fit Out to Start of ASRS |  | 70d | 2027-10-05 | 2028-01-18 | AR2160, AR1940, AR2170, AR2100 | 14d | 0d |  | 70 | 90 | 60 | FT |  |
|  | 4 | **Warehouse/ASRS - ASRS** |  |  | 2028-01-19 | 2029-10-17 |  |  |  |  |  |  |  |  |  |
| AR3080 |  | ASRS & AGV - Onsite Installation Works |  | 205d | 2028-01-19 | 2028-11-07 | AR2430, AR2160, AR2420, M3660 | 14d | 0d |  | 205 | 220 | 200 |  |  |
| AR3640 |  | ASRS & AGV - Testing & Commissioning |  | 150d | 2028-11-08 | 2029-06-19 | AR3080, AR2420, CP3070, M4172 | 14d | 0d |  | 150 | 170 | 130 |  |  |
| AR3645 |  | ASRS & AGV - Interlogistics Testing |  | 85d | 2029-06-20 | 2029-10-16 | AR3640 | 14d | 0d |  | 85 | 100 | 80 |  |  |
| AR3650 |  | ASRS & AGV - Turnover to Operations | milestone | 0d | 2029-10-17 | 2029-10-17 | AR3645 | 14d | 0d |  | 0 |  |  |  | 2029-07-18 |

Notes:
- AR3650: Expenses: ASRS & AGV - Ready to Receive GMP Material - (cost) 0

## Activity codes

| Code | Value | Meaning |
| --- | --- | --- |
| Activity Type | FT | FItout |
| Activity Type | S&C | Shell & Core |
| Shire Wild Card | New | New Structural Activity |
